| start | leveling_delay_units | name | wbs | constraint_type | critical | priority | actual_duration | duration | remaining_duration | percent_complete | early_start | early_finish | late_start | late_finish | actual_start | unique_id | summary | created | resume | stop | outline_number | type | fixed_cost_accrual | leveling_can_split | level_assignments | complete_through | guid | active | baseline_fixed_cost_accrual | scheduled_duration | scheduled_finish | scheduled_start | recalc_outline_codes | finish | activity_percent_complete | free_slack | total_slack | id | rollup | outline_level | finish_slack | parent_task_unique_id | successors | text2 | text3 | text4 | text5 | summary_progress | task_mode | manual_duration | percent_work_complete | actual_finish | predecessors | start_slack |
| --- | --- | --- | --- | --- | --- | --- | --- | --- | --- | --- | --- | --- | --- | --- | --- | --- | --- | --- | --- | --- | --- | --- | --- | --- | --- | --- | --- | --- | --- | --- | --- | --- | --- | --- | --- | --- | --- | --- | --- | --- | --- | --- | --- | --- | --- | --- | --- | --- | --- | --- | --- | --- | --- | --- |
| 2025-01-02T08:00:00.0 | ed | Sample Construction Project | 0 | AS_SOON_AS_POSSIBLE | True | 500 | 4682256 | 14054400 | 9372144 | 33.0 | 2025-01-02T08:00:00.0 | 2026-11-16T17:00:00.0 | 2025-01-02T08:00:00.0 | 2026-11-16T17:00:00.0 | 2025-01-02T08:00:00.0 | 0 | True | 2024-03-13T14:56:00.0 | 2025-01-14T17:00:00.0 | 2025-01-14T17:00:00.0 | 0 | FIXED_DURATION | PRORATED | True | True | 2025-08-15T08:19:12.0 | 00000000-0000-0000-0000-000000000264 | True | PRORATED | 14054400 | 2026-11-16T17:00:00.0 | 2025-01-02T08:00:00.0 | True | 2026-11-16T17:00:00.0 | 33.0 |  |  |  |  |  |  |  |  |  |  |  |  |  |  |  |  |  |  |  |
| 2025-01-02T08:00:00.0 | ed | Site | 1 | AS_SOON_AS_POSSIBLE |  | 500 | 5097372 | 13392000 | 8294628 | 38.0 | 2025-01-02T08:00:00.0 | 2026-10-14T17:00:00.0 | 2025-01-02T08:00:00.0 | 2026-11-16T17:00:00.0 | 2025-01-02T08:00:00.0 | 1 | True | 2024-03-13T14:56:00.0 | 2025-01-14T17:00:00.0 | 2025-01-14T17:00:00.0 | 1 | FIXED_DURATION | PRORATED | True | True | 2025-09-05T14:36:00.0 | 00000000-0000-0000-0000-000000000117 | True | PRORATED | 13392000 | 2026-10-14T17:00:00.0 | 2025-01-02T08:00:00.0 | True | 2026-10-14T17:00:00.0 | 38.0 | 662400 | 662400 | 1 | True | 1 | 662400 | 0 |  |  |  |  |  |  |  |  |  |  |  |  |
| 2025-01-02T08:00:00.0 | ed | Existing site/ground | 1.1 | AS_SOON_AS_POSSIBLE | True | 500 | 3559896 | 13392000 | 9832104 | 27.0 | 2025-01-02T08:00:00.0 | 2026-10-14T17:00:00.0 | 2025-01-02T08:00:00.0 | 2026-10-14T17:00:00.0 | 2025-01-02T08:00:00.0 | 2 | True | 2024-03-13T14:56:00.0 | 2025-01-14T17:00:00.0 | 2025-01-14T17:00:00.0 | 1.1 | FIXED_DURATION | PRORATED | True | True | 2025-06-26T13:24:00.0 | 00000000-0000-0000-0000-000000000091 | True | PRORATED | 13392000 | 2026-10-14T17:00:00.0 | 2025-01-02T08:00:00.0 | True | 2026-10-14T17:00:00.0 | 27.0 |  |  | 2 | True | 2 |  | 1 |  |  |  |  |  |  |  |  |  |  |  |  |
| 2025-01-02T08:00:00.0 | ed | Topography | 1.1.1 | AS_SOON_AS_POSSIBLE |  | 500 | 3369600 | 13392000 | 10022400 | 25.0 | 2025-01-02T08:00:00.0 | 2026-10-14T17:00:00.0 | 2025-02-04T08:00:00.0 | 2026-11-16T17:00:00.0 | 2025-01-02T08:00:00.0 | 3 |  | 2024-03-13T14:56:00.0 | 2025-06-16T08:00:00.0 | 2025-06-13T17:00:00.0 | 1.1.1 |  | PRORATED | True | True | 2025-06-13T10:00:00.0 | 00000000-0000-0000-0000-000000000168 | True | PRORATED | 13392000 | 2026-10-14T17:00:00.0 | 2025-01-02T08:00:00.0 | True | 2026-10-14T17:00:00.0 | 25.0 |  | 662400 | 3 |  | 3 | 662400 | 2 | 1 3 4 SS, 2 3 6 SS, 3 3 7 144000 SS | Site | Topography | Temporary | Explicit Selection | 2025-01-02T08:00:00.0 | MANUALLY_SCHEDULED | 13392000 |  |  |  |  |
| 2025-01-02T08:00:00.0 | ed | Excavate Site | 1.1.2 | AS_SOON_AS_POSSIBLE |  | 500 | 259200 | 259200 |  | 100.0 | 2025-01-02T08:00:00.0 | 2025-01-14T17:00:00.0 | 2025-01-02T08:00:00.0 | 2025-01-14T17:00:00.0 | 2025-01-02T08:00:00.0 | 4 |  | 2024-03-13T14:56:00.0 | 2025-01-14T17:00:00.0 | 2025-01-14T17:00:00.0 | 1.1.2 |  | PRORATED | True | True | 2025-01-14T17:00:00.0 | 00000000-0000-0000-0000-000000000248 | True | PRORATED | 259200 | 2025-01-14T17:00:00.0 | 2025-01-02T08:00:00.0 | True | 2025-01-14T17:00:00.0 | 100.0 |  |  | 4 |  | 3 |  | 2 |  | Site | Excavation Layer | Construct |  | 2025-01-02T08:00:00.0 |  |  | 100.0 | 2025-01-14T17:00:00.0 | 1 3 4 SS |  |
| 2025-01-02T08:00:00.0 | ed | Mobilize & Secure Site | 1.2 | AS_SOON_AS_POSSIBLE |  | 500 | 4672745 | 11721600 | 7048854 | 40.0 | 2025-01-02T08:00:00.0 | 2026-07-24T17:00:00.0 | 2025-01-02T08:00:00.0 | 2026-11-16T17:00:00.0 | 2025-01-02T08:00:00.0 | 5 | True | 2024-03-13T14:56:00.0 | 2025-04-09T17:00:00.0 | 2025-04-09T17:00:00.0 | 1.2 | FIXED_DURATION | PRORATED | True | True | 2025-08-18T15:24:00.0 | 00000000-0000-0000-0000-000000000167 | True | PRORATED | 11721600 | 2026-07-24T17:00:00.0 | 2025-01-02T08:00:00.0 | True | 2026-07-24T17:00:00.0 | 40.0 | 2332800 | 2332800 | 5 | True | 2 | 2332800 | 1 |  |  |  |  |  |  |  |  |  |  |  |  |
| 2025-01-02T08:00:00.0 | ed | Fence_Chainlink_Reed | 1.2.1 | AS_SOON_AS_POSSIBLE |  | 500 | 3559680 | 8899200 | 5339520 | 40.0 | 2025-01-02T08:00:00.0 | 2026-03-10T17:00:00.0 | 2025-01-02T08:00:00.0 | 2026-11-16T17:00:00.0 | 2025-01-02T08:00:00.0 | 6 |  | 2024-03-13T14:56:00.0 | 2025-06-24T13:48:00.0 | 2025-06-24T13:48:00.0 | 1.2.1 |  | PRORATED | True | True | 2025-06-24T13:48:00.0 | 00000000-0000-0000-0000-000000000153 | True | PRORATED | 8899200 | 2026-03-10T17:00:00.0 | 2025-01-02T08:00:00.0 | True | 2026-03-10T17:00:00.0 | 40.0 |  | 5155200 | 6 |  | 3 | 5155200 | 5 | 8 6 12 57600 SS, 9 6 13 230400 SS, 10 6 14 345600 SS | Site | Equipment > Fencing | Temporary | Sets->Site->Fence_Chainlink_Reed | 2025-01-02T08:00:00.0 |  |  |  |  | 2 3 6 SS |  |
| 2025-01-09T08:00:00.0 | ed | Construction Trailer | 1.2.2 | AS_SOON_AS_POSSIBLE |  | 500 | 3225600 | 9302400 | 6076800 | 35.0 | 2025-01-09T08:00:00.0 | 2026-04-06T17:00:00.0 | 2025-01-09T08:00:00.0 | 2026-11-16T17:00:00.0 | 2025-01-09T08:00:00.0 | 7 |  | 2024-03-13T14:56:00.0 | 2025-06-16T08:00:00.0 | 2025-06-13T17:00:00.0 | 1.2.2 |  | PRORATED | True | True | 2025-06-17T08:24:00.0 | 00000000-0000-0000-0000-000000000208 | True | PRORATED | 9302400 | 2026-04-06T17:00:00.0 | 2025-01-09T08:00:00.0 | True | 2026-04-06T17:00:00.0 | 35.0 |  | 4608000 | 7 |  | 3 | 4608000 | 5 | 4 7 8 SS, 5 7 9 SS, 6 7 10 SS, 7 7 11 SS | Site | Equipment > Construction Trailer | Temporary | Sets->Site->Construction Trailer | 2025-01-09T08:00:00.0 |  |  |  |  | 3 3 7 144000 SS |  |
| 2025-01-09T08:00:00.0 | ed | Storage Container | 1.2.3 | AS_SOON_AS_POSSIBLE |  | 500 | 2669760 | 8899200 | 6229440 | 30.0 | 2025-01-09T08:00:00.0 | 2026-03-17T17:00:00.0 | 2025-01-09T08:00:00.0 | 2026-11-16T17:00:00.0 | 2025-01-09T08:00:00.0 | 8 |  | 2024-03-13T14:56:00.0 | 2025-05-19T14:36:00.0 | 2025-05-19T14:36:00.0 | 1.2.3 |  | PRORATED | True | True | 2025-05-19T14:36:00.0 | 00000000-0000-0000-0000-000000000080 | True | PRORATED | 8899200 | 2026-03-17T17:00:00.0 | 2025-01-09T08:00:00.0 | True | 2026-03-17T17:00:00.0 | 30.0 | 5011200 | 5011200 | 8 |  | 3 | 5011200 | 5 |  | Site | Equipment > Storage Container | Temporary | Sets->Site->Storage Container | 2025-01-09T08:00:00.0 |  |  |  |  | 4 7 8 SS |  |
| 2025-01-09T08:00:00.0 | ed | Tool Trailer | 1.2.4 | AS_SOON_AS_POSSIBLE |  | 500 | 3225600 | 11577600 | 8352000 | 28.0 | 2025-01-09T08:00:00.0 | 2026-07-24T17:00:00.0 | 2025-01-09T08:00:00.0 | 2026-11-16T17:00:00.0 | 2025-01-09T08:00:00.0 | 9 |  | 2024-03-13T14:56:00.0 | 2025-06-16T08:00:00.0 | 2025-06-13T17:00:00.0 | 1.2.4 |  | PRORATED | True | True | 2025-06-16T13:28:48.0 | 00000000-0000-0000-0000-000000000145 | True | PRORATED | 11577600 | 2026-07-24T17:00:00.0 | 2025-01-09T08:00:00.0 | True | 2026-07-24T17:00:00.0 | 28.0 | 2332800 | 2332800 | 9 |  | 3 | 2332800 | 5 |  | Site | Equipment > Tool Trailer | Temporary | Sets->Site->Tool Trailer | 2025-01-09T08:00:00.0 |  |  |  |  | 5 7 9 SS |  |
| 2025-01-09T08:00:00.0 | ed | Porta-John | 1.2.5 | AS_SOON_AS_POSSIBLE |  | 500 | 3225600 | 11577600 | 8352000 | 28.0 | 2025-01-09T08:00:00.0 | 2026-07-24T17:00:00.0 | 2025-01-09T08:00:00.0 | 2026-11-16T17:00:00.0 | 2025-01-09T08:00:00.0 | 10 |  | 2024-03-13T14:56:00.0 | 2025-06-16T08:00:00.0 | 2025-06-13T17:00:00.0 | 1.2.5 |  | PRORATED | True | True | 2025-06-16T13:28:48.0 | 00000000-0000-0000-0000-000000000150 | True | PRORATED | 11577600 | 2026-07-24T17:00:00.0 | 2025-01-09T08:00:00.0 | True | 2026-07-24T17:00:00.0 | 28.0 | 2332800 | 2332800 | 10 |  | 3 | 2332800 | 5 |  | Site | Equipment > Porta-John | Temporary | Sets->Site->Porta-John | 2025-01-09T08:00:00.0 |  |  |  |  | 6 7 10 SS |  |
| 2025-01-09T08:00:00.0 | ed | Waste Container | 1.2.6 | AS_SOON_AS_POSSIBLE |  | 500 | 4052160 | 11577600 | 7525440 | 35.0 | 2025-01-09T08:00:00.0 | 2026-07-24T17:00:00.0 | 2025-01-09T08:00:00.0 | 2026-11-16T17:00:00.0 | 2025-01-09T08:00:00.0 | 11 |  | 2024-03-13T14:56:00.0 | 2025-07-24T14:36:00.0 | 2025-07-24T14:36:00.0 | 1.2.6 |  | PRORATED | True | True | 2025-07-24T14:36:00.0 | 00000000-0000-0000-0000-000000000183 | True | PRORATED | 11577600 | 2026-07-24T17:00:00.0 | 2025-01-09T08:00:00.0 | True | 2026-07-24T17:00:00.0 | 35.0 | 2332800 | 2332800 | 11 |  | 3 | 2332800 | 5 |  | Site | Equipment > Waste Container | Temporary | Sets->Site->Waste_Container | 2025-01-09T08:00:00.0 |  |  |  |  | 7 7 11 SS |  |
| 2025-01-06T08:00:00.0 | ed | Pickup Truck | 1.2.7 | AS_SOON_AS_POSSIBLE |  | 500 | 3312000 | 8841600 | 5529600 | 37.0 | 2025-01-06T08:00:00.0 | 2026-03-10T17:00:00.0 | 2025-01-06T08:00:00.0 | 2026-11-16T17:00:00.0 | 2025-01-06T08:00:00.0 | 12 |  | 2024-03-13T14:56:00.0 | 2025-06-16T08:00:00.0 | 2025-06-13T17:00:00.0 | 1.2.7 |  | PRORATED | True | True | 2025-06-12T13:43:12.0 | 00000000-0000-0000-0000-000000000163 | True | PRORATED | 8841600 | 2026-03-10T17:00:00.0 | 2025-01-06T08:00:00.0 | True | 2026-03-10T17:00:00.0 | 37.0 | 5155200 | 5155200 | 12 |  | 3 | 5155200 | 5 |  | Site | Equipment > Pick-Up Truck | Equipment | Sets->Site->Pick-Up_Truck | 2025-01-06T08:00:00.0 |  |  |  |  | 8 6 12 57600 SS |  |
| 2025-01-14T08:00:00.0 | ed | Lay-Down Pad | 1.2.8 | AS_SOON_AS_POSSIBLE |  | 500 | 3110400 | 4147200 | 1036800 | 75.0 | 2025-01-14T08:00:00.0 | 2025-08-01T17:00:00.0 | 2025-01-14T08:00:00.0 | 2026-11-16T17:00:00.0 | 2025-01-14T08:00:00.0 | 13 |  | 2024-03-13T14:56:00.0 | 2025-06-13T08:00:00.0 | 2025-06-12T17:00:00.0 | 1.2.8 |  | PRORATED | True | True | 2025-06-12T17:00:00.0 | 00000000-0000-0000-0000-000000000087 | True | PRORATED | 4147200 | 2025-08-01T17:00:00.0 | 2025-01-14T08:00:00.0 | True | 2025-08-01T17:00:00.0 | 75.0 | 9676800 | 9676800 | 13 |  | 3 | 9676800 | 5 | 16 13 23 SS | Site | Equipment > Lay-Down Pad | Temporary | Sets->Site->Lay-Down Pad | 2025-01-14T08:00:00.0 |  |  |  |  | 9 6 13 230400 SS |  |
| 2025-01-20T08:00:00.0 | ed | Construction Crane | 1.2.9 | AS_SOON_AS_POSSIBLE |  | 500 | 3024000 | 3110400 | 86400 | 97.0 | 2025-01-20T08:00:00.0 | 2025-06-18T17:00:00.0 | 2025-01-20T08:00:00.0 | 2026-11-16T17:00:00.0 | 2025-01-20T08:00:00.0 | 14 |  | 2024-03-13T14:56:00.0 | 2025-06-16T08:00:00.0 | 2025-06-13T17:00:00.0 | 1.2.9 |  | PRORATED | True | True | 2025-06-13T15:04:48.0 | 00000000-0000-0000-0000-000000000214 | True | PRORATED | 3110400 | 2025-06-18T17:00:00.0 | 2025-01-20T08:00:00.0 | True | 2025-06-18T17:00:00.0 | 97.0 | 10598400 | 10598400 | 14 |  | 3 | 10598400 | 5 | 11 14 15 288000 SS | Site | Equipment > Construction Crane | Equipment | Sets->Site->Construction_Crane | 2025-01-20T08:00:00.0 |  |  |  |  | 10 6 14 345600 SS |  |
| 2025-02-03T08:00:00.0 | ed | Concrete Truck | 1.2.10 | AS_SOON_AS_POSSIBLE |  | 500 | 1382400 | 1382400 |  | 100.0 | 2025-02-03T08:00:00.0 | 2025-04-09T17:00:00.0 | 2025-02-03T08:00:00.0 | 2025-04-09T17:00:00.0 | 2025-02-03T08:00:00.0 | 15 |  | 2024-03-13T14:56:00.0 | 2025-04-09T17:00:00.0 | 2025-04-09T17:00:00.0 | 1.2.10 |  | PRORATED | True | True | 2025-04-09T17:00:00.0 | 00000000-0000-0000-0000-000000000112 | True | PRORATED | 1382400 | 2025-04-09T17:00:00.0 | 2025-02-03T08:00:00.0 | True | 2025-04-09T17:00:00.0 | 100.0 |  |  | 15 |  | 3 |  | 5 | 12 15 16 57600 SS, 13 15 18 FS | Site | Equipment > Concrete Truck | Equipment | Sets->Site->Concrete_Truck | 2025-02-03T08:00:00.0 |  |  | 100.0 | 2025-04-09T17:00:00.0 | 11 14 15 288000 SS |  |
| 2025-02-05T08:00:00.0 | ed | Concrete Boom Pump Truck | 1.2.11 | AS_SOON_AS_POSSIBLE |  | 500 | 1382400 | 1382400 |  | 100.0 | 2025-02-05T08:00:00.0 | 2025-04-11T17:00:00.0 | 2025-02-05T08:00:00.0 | 2025-04-11T17:00:00.0 | 2025-02-05T08:00:00.0 | 16 |  | 2024-03-13T14:56:00.0 | 2025-04-11T17:00:00.0 | 2025-04-11T17:00:00.0 | 1.2.11 |  | PRORATED | True | True | 2025-04-11T17:00:00.0 | 00000000-0000-0000-0000-000000000154 | True | PRORATED | 1382400 | 2025-04-11T17:00:00.0 | 2025-02-05T08:00:00.0 | True | 2025-04-11T17:00:00.0 | 100.0 |  |  | 16 |  | 3 |  | 5 |  | Site | Equipment > Pump Truck | Equipment | Sets->Site->Concrete Boom Pump Truck | 2025-02-05T08:00:00.0 |  |  | 100.0 | 2025-04-11T17:00:00.0 | 12 15 16 57600 SS |  |
| 2025-04-10T08:00:00.0 | ed | Tower Crane | 1.3 | AS_SOON_AS_POSSIBLE |  | 500 | 1549440 | 3772800 | 2223360 | 41.0 | 2025-04-10T08:00:00.0 | 2025-10-09T17:00:00.0 | 2025-04-10T08:00:00.0 | 2026-11-16T17:00:00.0 | 2025-04-10T08:00:00.0 | 17 | True | 2024-03-13T14:56:00.0 | 2025-04-14T17:00:00.0 | 2025-04-14T17:00:00.0 | 1.3 | FIXED_DURATION | PRORATED | True | True | 2025-06-24T14:40:48.0 | 00000000-0000-0000-0000-000000000195 | True | PRORATED | 3772800 | 2025-10-09T17:00:00.0 | 2025-04-10T08:00:00.0 | True | 2025-10-09T17:00:00.0 | 41.0 | 8265600 | 8265600 | 17 | True | 2 | 8265600 | 1 |  |  |  |  |  |  |  |  |  |  |  |  |
| 2025-04-10T08:00:00.0 | ed | TowerCrane-Assemble | 1.3.1 | AS_SOON_AS_POSSIBLE |  | 500 | 86400 | 86400 |  | 100.0 | 2025-04-10T08:00:00.0 | 2025-04-14T17:00:00.0 | 2025-04-10T08:00:00.0 | 2025-04-14T17:00:00.0 | 2025-04-10T08:00:00.0 | 18 |  | 2024-03-13T14:56:00.0 | 2025-04-14T17:00:00.0 | 2025-04-14T17:00:00.0 | 1.3.1 |  | PRORATED | True | True | 2025-04-14T17:00:00.0 | 00000000-0000-0000-0000-000000000005 | True | PRORATED | 86400 | 2025-04-14T17:00:00.0 | 2025-04-10T08:00:00.0 | True | 2025-04-14T17:00:00.0 | 100.0 |  |  | 18 |  | 3 |  | 17 | 14 18 19 FS | Site | Equipment > Tower Crane | Equipment-Setup | Sets->Tower_Crane | 2025-04-10T08:00:00.0 |  |  | 100.0 | 2025-04-14T17:00:00.0 | 13 15 18 FS |  |
| 2025-04-15T08:00:00.0 | ed | TowerCrane-Use | 1.3.2 | AS_SOON_AS_POSSIBLE |  | 500 | 1463040 | 3657600 | 2194560 | 40.0 | 2025-04-15T08:00:00.0 | 2025-10-08T17:00:00.0 | 2025-04-15T08:00:00.0 | 2026-11-13T17:00:00.0 | 2025-04-15T08:00:00.0 | 19 |  | 2024-03-13T14:56:00.0 | 2025-06-24T15:24:00.0 | 2025-06-24T15:24:00.0 | 1.3.2 |  | PRORATED | True | True | 2025-06-24T15:24:00.0 | 00000000-0000-0000-0000-000000000269 | True | PRORATED | 3657600 | 2025-10-08T17:00:00.0 | 2025-04-15T08:00:00.0 | True | 2025-10-08T17:00:00.0 | 40.0 |  | 8265600 | 19 |  | 3 | 8265600 | 17 | 15 19 20 FS | Site | Equipment > Tower Crane | Equipment | Sets->Tower_Crane | 2025-04-15T08:00:00.0 |  |  |  |  | 14 18 19 FS |  |
| 2025-10-09T08:00:00.0 | ed | TowerCrane-Disassemble | 1.3.3 | AS_SOON_AS_POSSIBLE |  | 500 |  | 28800 | 28800 |  | 2025-10-09T08:00:00.0 | 2025-10-09T17:00:00.0 | 2026-11-16T08:00:00.0 | 2026-11-16T17:00:00.0 |  | 20 |  | 2024-03-13T14:56:00.0 |  |  | 1.3.3 |  | PRORATED | True | True |  | 00000000-0000-0000-0000-000000000314 | True | PRORATED | 28800 | 2025-10-09T17:00:00.0 | 2025-10-09T08:00:00.0 | True | 2025-10-09T17:00:00.0 |  | 8265600 | 8265600 | 20 |  | 3 | 8265600 | 17 |  | Site | Equipment > Tower Crane | Demolish | Sets->Tower_Crane | 2025-10-08T17:00:00.0 |  |  |  |  | 15 19 20 FS | 8265600 |
| 2025-01-14T08:00:00.0 | ed | Structural | 2 | AS_SOON_AS_POSSIBLE |  | 500 | 3048618 | 3513600 | 464982 | 87.0 | 2025-01-14T08:00:00.0 | 2025-07-02T17:00:00.0 | 2025-01-14T08:00:00.0 | 2026-11-16T17:00:00.0 | 2025-01-14T08:00:00.0 | 21 | True | 2024-03-13T14:56:00.0 | 2025-01-24T17:00:00.0 | 2025-01-24T17:00:00.0 | 2 | FIXED_DURATION | PRORATED | True | True | 2025-06-11T09:07:12.0 | 00000000-0000-0000-0000-000000000230 | True | PRORATED | 3513600 | 2025-07-02T17:00:00.0 | 2025-01-14T08:00:00.0 | True | 2025-07-02T17:00:00.0 | 87.0 | 10310400 | 10310400 | 21 | True | 1 | 10310400 | 0 |  |  |  |  |  |  |  |  |  |  |  |  |
| 2025-01-14T08:00:00.0 | ed | Structural - Foundation | 2.1 | AS_SOON_AS_POSSIBLE |  | 500 | 2073600 | 2073600 |  | 100.0 | 2025-01-14T08:00:00.0 | 2025-04-23T17:00:00.0 | 2025-01-14T08:00:00.0 | 2025-04-23T17:00:00.0 | 2025-01-14T08:00:00.0 | 22 | True | 2024-03-13T14:56:00.0 | 2025-01-24T17:00:00.0 | 2025-01-24T17:00:00.0 | 2.1 | FIXED_DURATION | PRORATED | True | True | 2025-04-23T17:00:00.0 | 00000000-0000-0000-0000-000000000016 | True | PRORATED | 2073600 | 2025-04-23T17:00:00.0 | 2025-01-14T08:00:00.0 | True | 2025-04-23T17:00:00.0 | 100.0 |  |  | 22 | True | 2 |  | 21 |  |  |  |  |  |  |  |  | 100.0 | 2025-04-23T17:00:00.0 |  |  |
| 2025-01-14T08:00:00.0 | ed | Drill_rig | 2.1.1 | AS_SOON_AS_POSSIBLE |  | 500 | 259200 | 259200 |  | 100.0 | 2025-01-14T08:00:00.0 | 2025-01-24T17:00:00.0 | 2025-01-14T08:00:00.0 | 2025-01-24T17:00:00.0 | 2025-01-14T08:00:00.0 | 23 |  | 2024-03-13T14:56:00.0 | 2025-01-24T17:00:00.0 | 2025-01-24T17:00:00.0 | 2.1.1 |  | PRORATED | True | True | 2025-01-24T17:00:00.0 | 00000000-0000-0000-0000-000000000008 | True | PRORATED | 259200 | 2025-01-24T17:00:00.0 | 2025-01-14T08:00:00.0 | True | 2025-01-24T17:00:00.0 | 100.0 |  |  | 23 |  | 3 |  | 22 | 17 23 24 57600 SS | Site | Equipment > Drill Rig | Equipment | Explicit Selection | 2025-01-14T08:00:00.0 |  |  | 100.0 | 2025-01-24T17:00:00.0 | 16 13 23 SS |  |
| 2025-01-16T08:00:00.0 | ed | Struct-Fndn-Pile_Pipe | 2.1.2 | AS_SOON_AS_POSSIBLE |  | 500 | 403200 | 403200 |  | 100.0 | 2025-01-16T08:00:00.0 | 2025-02-04T17:00:00.0 | 2025-01-16T08:00:00.0 | 2025-02-04T17:00:00.0 | 2025-01-16T08:00:00.0 | 24 |  | 2024-03-13T14:56:00.0 | 2025-02-04T17:00:00.0 | 2025-02-04T17:00:00.0 | 2.1.2 |  | PRORATED | True | True | 2025-02-04T17:00:00.0 | 00000000-0000-0000-0000-000000000120 | True | PRORATED | 403200 | 2025-02-04T17:00:00.0 | 2025-01-16T08:00:00.0 | True | 2025-02-04T17:00:00.0 | 100.0 |  |  | 24 |  | 3 |  | 22 | 18 24 25 FS | Building > Foundation | Structural > Pile Pipe | Construct | Sets->Structural->Foundation->Struct-Fndn-Pile_Pipe | 2025-01-16T08:00:00.0 |  |  | 100.0 | 2025-02-04T17:00:00.0 | 17 23 24 57600 SS |  |
| 2025-02-05T08:00:00.0 | ed | Struct-Fndn-Pile_Cap | 2.1.3 | AS_SOON_AS_POSSIBLE |  | 500 | 403200 | 403200 |  | 100.0 | 2025-02-05T08:00:00.0 | 2025-02-24T17:00:00.0 | 2025-02-05T08:00:00.0 | 2025-02-24T17:00:00.0 | 2025-02-05T08:00:00.0 | 25 |  | 2024-03-13T14:56:00.0 | 2025-02-24T17:00:00.0 | 2025-02-24T17:00:00.0 | 2.1.3 |  | PRORATED | True | True | 2025-02-24T17:00:00.0 | 00000000-0000-0000-0000-000000000155 | True | PRORATED | 403200 | 2025-02-24T17:00:00.0 | 2025-02-05T08:00:00.0 | True | 2025-02-24T17:00:00.0 | 100.0 |  |  | 25 |  | 3 |  | 22 | 19 25 26 FS | Building > Foundation | Structural > Pile Caps | Construct | Sets->Structural->Foundation->Struct-Fndn-Pile_Cap | 2025-02-05T08:00:00.0 |  |  | 100.0 | 2025-02-24T17:00:00.0 | 18 24 25 FS |  |
| 2025-02-25T08:00:00.0 | ed | Struct-Fndn-Footings | 2.1.4 | AS_SOON_AS_POSSIBLE |  | 500 | 201600 | 201600 |  | 100.0 | 2025-02-25T08:00:00.0 | 2025-03-05T17:00:00.0 | 2025-02-25T08:00:00.0 | 2025-03-05T17:00:00.0 | 2025-02-25T08:00:00.0 | 26 |  | 2024-03-13T14:56:00.0 | 2025-03-05T17:00:00.0 | 2025-03-05T17:00:00.0 | 2.1.4 |  | PRORATED | True | True | 2025-03-05T17:00:00.0 | 00000000-0000-0000-0000-000000000092 | True | PRORATED | 201600 | 2025-03-05T17:00:00.0 | 2025-02-25T08:00:00.0 | True | 2025-03-05T17:00:00.0 | 100.0 |  |  | 26 |  | 3 |  | 22 | 20 26 27 86400 FS | Building > Foundation | Structural > Footings | Construct | Sets->Structural->Foundation->Struct-Fndn-Footings | 2025-02-25T08:00:00.0 |  |  | 100.0 | 2025-03-05T17:00:00.0 | 19 25 26 FS |  |
| 2025-03-11T08:00:00.0 | ed | Underslap MEP/Utilities | 2.1.5 | AS_SOON_AS_POSSIBLE |  | 500 | 460800 | 460800 |  | 100.0 | 2025-03-11T08:00:00.0 | 2025-04-01T17:00:00.0 | 2025-03-11T08:00:00.0 | 2025-04-01T17:00:00.0 | 2025-03-11T08:00:00.0 | 27 |  | 2024-03-13T14:56:00.0 | 2025-04-01T17:00:00.0 | 2025-04-01T17:00:00.0 | 2.1.5 |  | PRORATED | True | True | 2025-04-01T17:00:00.0 | 00000000-0000-0000-0000-000000000207 | True | PRORATED | 460800 | 2025-04-01T17:00:00.0 | 2025-03-11T08:00:00.0 | True | 2025-04-01T17:00:00.0 | 100.0 |  |  | 27 |  | 3 |  | 22 | 21 27 28 115200 SS |  |  | Construct |  | 2025-03-11T08:00:00.0 |  |  | 100.0 | 2025-04-01T17:00:00.0 | 20 26 27 86400 FS |  |
| 2025-03-17T08:00:00.0 | ed | Struct-Fndn-Concrete Slabs_Walls_Columns | 2.1.6 | AS_SOON_AS_POSSIBLE |  | 500 | 547200 | 547200 |  | 100.0 | 2025-03-17T08:00:00.0 | 2025-04-10T17:00:00.0 | 2025-03-17T08:00:00.0 | 2025-04-10T17:00:00.0 | 2025-03-17T08:00:00.0 | 28 |  | 2024-03-13T14:56:00.0 | 2025-04-10T17:00:00.0 | 2025-04-10T17:00:00.0 | 2.1.6 |  | PRORATED | True | True | 2025-04-10T17:00:00.0 | 00000000-0000-0000-0000-000000000152 | True | PRORATED | 547200 | 2025-04-10T17:00:00.0 | 2025-03-17T08:00:00.0 | True | 2025-04-10T17:00:00.0 | 100.0 |  |  | 28 |  | 3 |  | 22 | 22 28 29 86400 FF | Building > Foundation | Structural > Slabs, Structural > Walls, Structural > Columns | Construct | Sets->Structural->Foundation->Struct-Fndn-Concrete Slabs, Walls, Columns | 2025-03-17T08:00:00.0 |  |  | 100.0 | 2025-04-10T17:00:00.0 | 21 27 28 115200 SS |  |
| 2025-04-15T08:00:00.0 | ed | Backfill Foundations | 2.1.7 | AS_SOON_AS_POSSIBLE |  | 500 | 28800 | 28800 |  | 100.0 | 2025-04-15T08:00:00.0 | 2025-04-15T17:00:00.0 | 2025-04-15T08:00:00.0 | 2025-04-15T17:00:00.0 | 2025-04-15T08:00:00.0 | 29 |  | 2024-03-13T14:56:00.0 | 2025-04-15T17:00:00.0 | 2025-04-15T17:00:00.0 | 2.1.7 |  | PRORATED | True | True | 2025-04-15T17:00:00.0 | 00000000-0000-0000-0000-000000000054 | True | PRORATED | 28800 | 2025-04-15T17:00:00.0 | 2025-04-15T08:00:00.0 | True | 2025-04-15T17:00:00.0 | 100.0 |  |  | 29 |  | 3 |  | 22 | 23 29 30 FS |  |  | Construct |  | 2025-04-15T08:00:00.0 |  |  | 100.0 | 2025-04-15T17:00:00.0 | 22 28 29 86400 FF |  |
| 2025-04-16T08:00:00.0 | ed | Struct-Floor-L1 | 2.1.8 | AS_SOON_AS_POSSIBLE |  | 500 | 172800 | 172800 |  | 100.0 | 2025-04-16T08:00:00.0 | 2025-04-23T17:00:00.0 | 2025-04-16T08:00:00.0 | 2025-04-23T17:00:00.0 | 2025-04-16T08:00:00.0 | 30 |  | 2024-03-13T14:56:00.0 | 2025-04-23T17:00:00.0 | 2025-04-23T17:00:00.0 | 2.1.8 |  | PRORATED | True | True | 2025-04-23T17:00:00.0 | 00000000-0000-0000-0000-000000000317 | True | PRORATED | 172800 | 2025-04-23T17:00:00.0 | 2025-04-16T08:00:00.0 | True | 2025-04-23T17:00:00.0 | 100.0 |  |  | 30 |  | 3 |  | 22 | 24 30 32 FS | Building > Level 1 | Structural > Floor | Construct | Sets->Structural->Floors->Struct-Floor-L1 | 2025-04-16T08:00:00.0 |  |  | 100.0 | 2025-04-23T17:00:00.0 | 23 29 30 FS |  |
| 2025-04-24T08:00:00.0 | ed | Structural - Steel | 2.2 | AS_SOON_AS_POSSIBLE |  | 500 | 1065600 | 1065600 |  | 100.0 | 2025-04-24T08:00:00.0 | 2025-06-13T17:00:00.0 | 2025-04-24T08:00:00.0 | 2025-06-13T17:00:00.0 | 2025-04-24T08:00:00.0 | 31 | True | 2024-03-13T14:56:00.0 | 2025-04-30T17:00:00.0 | 2025-04-30T17:00:00.0 | 2.2 | FIXED_DURATION | PRORATED | True | True | 2025-06-13T17:00:00.0 | 00000000-0000-0000-0000-000000000062 | True | PRORATED | 1065600 | 2025-06-13T17:00:00.0 | 2025-04-24T08:00:00.0 | True | 2025-06-13T17:00:00.0 | 100.0 |  |  | 31 | True | 2 |  | 21 |  |  |  |  |  |  |  |  | 100.0 | 2025-06-13T17:00:00.0 |  |  |
| 2025-04-24T08:00:00.0 | ed | folding_crane | 2.2.1 | AS_SOON_AS_POSSIBLE |  | 500 | 950400 | 950400 |  | 100.0 | 2025-04-24T08:00:00.0 | 2025-06-09T17:00:00.0 | 2025-04-24T08:00:00.0 | 2025-06-09T17:00:00.0 | 2025-04-24T08:00:00.0 | 32 |  | 2024-03-13T14:56:00.0 | 2025-06-09T17:00:00.0 | 2025-06-09T17:00:00.0 | 2.2.1 |  | PRORATED | True | True | 2025-06-09T17:00:00.0 | 00000000-0000-0000-0000-000000000232 | True | PRORATED | 950400 | 2025-06-09T17:00:00.0 | 2025-04-24T08:00:00.0 | True | 2025-06-09T17:00:00.0 | 100.0 |  |  | 32 |  | 3 |  | 31 | 25 32 33 28800 SS | Site | Equipment > Folding Crane | Equipment | Explicit Selection | 2025-04-24T08:00:00.0 |  |  | 100.0 | 2025-06-09T17:00:00.0 | 24 30 32 FS |  |
| 2025-04-25T08:00:00.0 | ed | Struct-Col-BaseL1 | 2.2.2 | AS_SOON_AS_POSSIBLE |  | 500 | 115200 | 115200 |  | 100.0 | 2025-04-25T08:00:00.0 | 2025-04-30T17:00:00.0 | 2025-04-25T08:00:00.0 | 2025-04-30T17:00:00.0 | 2025-04-25T08:00:00.0 | 33 |  | 2024-03-13T14:56:00.0 | 2025-04-30T17:00:00.0 | 2025-04-30T17:00:00.0 | 2.2.2 |  | PRORATED | True | True | 2025-04-30T17:00:00.0 | 00000000-0000-0000-0000-000000000234 | True | PRORATED | 115200 | 2025-04-30T17:00:00.0 | 2025-04-25T08:00:00.0 | True | 2025-04-30T17:00:00.0 | 100.0 |  |  | 33 |  | 3 |  | 31 | 26 33 34 FS | Building > Level 1 | Structural > Column Base | Construct | Sets->Structural->Columns->Struct-Col-BaseL1 | 2025-04-25T08:00:00.0 |  |  | 100.0 | 2025-04-30T17:00:00.0 | 25 32 33 28800 SS |  |
| 2025-05-01T08:00:00.0 | ed | Struct-Framing-L2 | 2.2.3 | AS_SOON_AS_POSSIBLE |  | 500 | 144000 | 144000 |  | 100.0 | 2025-05-01T08:00:00.0 | 2025-05-07T17:00:00.0 | 2025-05-01T08:00:00.0 | 2025-05-07T17:00:00.0 | 2025-05-01T08:00:00.0 | 34 |  | 2024-03-13T14:56:00.0 | 2025-05-07T17:00:00.0 | 2025-05-07T17:00:00.0 | 2.2.3 |  | PRORATED | True | True | 2025-05-07T17:00:00.0 | 00000000-0000-0000-0000-000000000169 | True | PRORATED | 144000 | 2025-05-07T17:00:00.0 | 2025-05-01T08:00:00.0 | True | 2025-05-07T17:00:00.0 | 100.0 |  |  | 34 |  | 3 |  | 31 | 27 34 35 FS | Building > Level 2 | Structural > Framing | Construct | Sets->Structural->Framing->Struct-Framing-L2 | 2025-05-01T08:00:00.0 |  |  | 100.0 | 2025-05-07T17:00:00.0 | 26 33 34 FS |  |
| 2025-05-08T08:00:00.0 | ed | Struct-Framing-L3 | 2.2.4 | AS_SOON_AS_POSSIBLE |  | 500 | 144000 | 144000 |  | 100.0 | 2025-05-08T08:00:00.0 | 2025-05-14T17:00:00.0 | 2025-05-08T08:00:00.0 | 2025-05-14T17:00:00.0 | 2025-05-08T08:00:00.0 | 35 |  | 2024-03-13T14:56:00.0 | 2025-05-14T17:00:00.0 | 2025-05-14T17:00:00.0 | 2.2.4 |  | PRORATED | True | True | 2025-05-14T17:00:00.0 | 00000000-0000-0000-0000-000000000059 | True | PRORATED | 144000 | 2025-05-14T17:00:00.0 | 2025-05-08T08:00:00.0 | True | 2025-05-14T17:00:00.0 | 100.0 |  |  | 35 |  | 3 |  | 31 | 28 35 36 FS | Building > Level 3 | Structural > Framing | Construct | Sets->Structural->Framing->Struct-Framing-L3 | 2025-05-08T08:00:00.0 |  |  | 100.0 | 2025-05-14T17:00:00.0 | 27 34 35 FS |  |
| 2025-05-15T08:00:00.0 | ed | Struct-Col-BaseL3 | 2.2.5 | AS_SOON_AS_POSSIBLE |  | 500 | 115200 | 115200 |  | 100.0 | 2025-05-15T08:00:00.0 | 2025-05-20T17:00:00.0 | 2025-05-15T08:00:00.0 | 2025-05-20T17:00:00.0 | 2025-05-15T08:00:00.0 | 36 |  | 2024-03-13T14:56:00.0 | 2025-05-20T17:00:00.0 | 2025-05-20T17:00:00.0 | 2.2.5 |  | PRORATED | True | True | 2025-05-20T17:00:00.0 | 00000000-0000-0000-0000-000000000055 | True | PRORATED | 115200 | 2025-05-20T17:00:00.0 | 2025-05-15T08:00:00.0 | True | 2025-05-20T17:00:00.0 | 100.0 |  |  | 36 |  | 3 |  | 31 | 29 36 37 FS | Building > Level 3 | Structural > Column Base | Construct | Sets->Structural->Columns->Struct-Col-BaseL3 | 2025-05-15T08:00:00.0 |  |  | 100.0 | 2025-05-20T17:00:00.0 | 28 35 36 FS |  |
| 2025-05-21T08:00:00.0 | ed | Struct-Framing-L4 | 2.2.6 | AS_SOON_AS_POSSIBLE |  | 500 | 86400 | 86400 |  | 100.0 | 2025-05-21T08:00:00.0 | 2025-05-23T17:00:00.0 | 2025-05-21T08:00:00.0 | 2025-05-23T17:00:00.0 | 2025-05-21T08:00:00.0 | 37 |  | 2024-03-13T14:56:00.0 | 2025-05-23T17:00:00.0 | 2025-05-23T17:00:00.0 | 2.2.6 |  | PRORATED | True | True | 2025-05-23T17:00:00.0 | 00000000-0000-0000-0000-000000000060 | True | PRORATED | 86400 | 2025-05-23T17:00:00.0 | 2025-05-21T08:00:00.0 | True | 2025-05-23T17:00:00.0 | 100.0 |  |  | 37 |  | 3 |  | 31 | 30 37 38 FS, 37 37 44 FS | Building > Level 4 | Structural > Framing | Construct | Sets->Structural->Framing->Struct-Framing-L4 | 2025-05-21T08:00:00.0 |  |  | 100.0 | 2025-05-23T17:00:00.0 | 29 36 37 FS |  |
| 2025-05-26T08:00:00.0 | ed | Struct-Col-BaseL4 | 2.2.7 | AS_SOON_AS_POSSIBLE |  | 500 | 28800 | 28800 |  | 100.0 | 2025-05-26T08:00:00.0 | 2025-05-26T17:00:00.0 | 2025-05-26T08:00:00.0 | 2025-05-26T17:00:00.0 | 2025-05-26T08:00:00.0 | 38 |  | 2024-03-13T14:56:00.0 | 2025-05-26T17:00:00.0 | 2025-05-26T17:00:00.0 | 2.2.7 |  | PRORATED | True | True | 2025-05-26T17:00:00.0 | 00000000-0000-0000-0000-000000000316 | True | PRORATED | 28800 | 2025-05-26T17:00:00.0 | 2025-05-26T08:00:00.0 | True | 2025-05-26T17:00:00.0 | 100.0 |  |  | 38 |  | 3 |  | 31 | 31 38 39 FS | Building > Level 4 | Structural > Column Base | Construct | Sets->Structural->Columns->Struct-Col-BaseL4 | 2025-05-26T08:00:00.0 |  |  | 100.0 | 2025-05-26T17:00:00.0 | 30 37 38 FS |  |
| 2025-05-27T08:00:00.0 | ed | Struct-Framing-L5 | 2.2.8 | AS_SOON_AS_POSSIBLE |  | 500 | 144000 | 144000 |  | 100.0 | 2025-05-27T08:00:00.0 | 2025-06-02T17:00:00.0 | 2025-05-27T08:00:00.0 | 2025-06-02T17:00:00.0 | 2025-05-27T08:00:00.0 | 39 |  | 2024-03-13T14:56:00.0 | 2025-06-02T17:00:00.0 | 2025-06-02T17:00:00.0 | 2.2.8 |  | PRORATED | True | True | 2025-06-02T17:00:00.0 | 00000000-0000-0000-0000-000000000244 | True | PRORATED | 144000 | 2025-06-02T17:00:00.0 | 2025-05-27T08:00:00.0 | True | 2025-06-02T17:00:00.0 | 100.0 |  |  | 39 |  | 3 |  | 31 | 32 39 40 FS, 38 39 45 FS | Building > Level 5 | Structural > Framing | Construct | Sets->Structural->Framing->Struct-Framing-L5 | 2025-05-27T08:00:00.0 |  |  | 100.0 | 2025-06-02T17:00:00.0 | 31 38 39 FS |  |
| 2025-06-03T08:00:00.0 | ed | Struct-Col-BaseL5 | 2.2.9 | AS_SOON_AS_POSSIBLE |  | 500 | 115200 | 115200 |  | 100.0 | 2025-06-03T08:00:00.0 | 2025-06-06T17:00:00.0 | 2025-06-03T08:00:00.0 | 2025-06-06T17:00:00.0 | 2025-06-03T08:00:00.0 | 40 |  | 2024-03-13T14:56:00.0 | 2025-06-06T17:00:00.0 | 2025-06-06T17:00:00.0 | 2.2.9 |  | PRORATED | True | True | 2025-06-06T17:00:00.0 | 00000000-0000-0000-0000-000000000258 | True | PRORATED | 115200 | 2025-06-06T17:00:00.0 | 2025-06-03T08:00:00.0 | True | 2025-06-06T17:00:00.0 | 100.0 |  |  | 40 |  | 3 |  | 31 | 33 40 41 FS | Building > Level 5 | Structural > Column Base | Construct | Sets->Structural->Columns->Struct-Col-BaseL5 | 2025-06-03T08:00:00.0 |  |  | 100.0 | 2025-06-06T17:00:00.0 | 32 39 40 FS |  |
| 2025-06-09T08:00:00.0 | ed | Struct-Framing-L6 | 2.2.10 | AS_SOON_AS_POSSIBLE |  | 500 | 86400 | 86400 |  | 100.0 | 2025-06-09T08:00:00.0 | 2025-06-11T17:00:00.0 | 2025-06-09T08:00:00.0 | 2025-06-11T17:00:00.0 | 2025-06-09T08:00:00.0 | 41 |  | 2024-03-13T14:56:00.0 | 2025-06-11T17:00:00.0 | 2025-06-11T17:00:00.0 | 2.2.10 |  | PRORATED | True | True | 2025-06-11T17:00:00.0 | 00000000-0000-0000-0000-000000000192 | True | PRORATED | 86400 | 2025-06-11T17:00:00.0 | 2025-06-09T08:00:00.0 | True | 2025-06-11T17:00:00.0 | 100.0 |  |  | 41 |  | 3 |  | 31 | 34 41 42 FS, 39 41 46 FS | Building > Level 6 | Structural > Framing | Construct | Sets->Structural->Framing->Struct-Framing-L6 | 2025-06-09T08:00:00.0 |  |  | 100.0 | 2025-06-11T17:00:00.0 | 33 40 41 FS |  |
| 2025-06-12T08:00:00.0 | ed | Struct-Framing-L7 | 2.2.11 | AS_SOON_AS_POSSIBLE |  | 500 | 57600 | 57600 |  | 100.0 | 2025-06-12T08:00:00.0 | 2025-06-13T17:00:00.0 | 2025-06-12T08:00:00.0 | 2025-06-13T17:00:00.0 | 2025-06-12T08:00:00.0 | 42 |  | 2024-03-13T14:56:00.0 | 2025-06-13T17:00:00.0 | 2025-06-13T17:00:00.0 | 2.2.11 |  | PRORATED | True | True | 2025-06-13T17:00:00.0 | 00000000-0000-0000-0000-000000000202 | True | PRORATED | 57600 | 2025-06-13T17:00:00.0 | 2025-06-12T08:00:00.0 | True | 2025-06-13T17:00:00.0 | 100.0 |  |  | 42 |  | 3 |  | 31 | 40 42 47 FS | Building > Level 7 | Structural > Framing | Construct | Sets->Structural->Framing->Struct-Framing-L7 | 2025-06-12T08:00:00.0 |  |  | 100.0 | 2025-06-13T17:00:00.0 | 34 41 42 FS |  |
| 2025-05-26T08:00:00.0 | ed | Structural - Floor - Metal Decking and Concrete | 2.3 | AS_SOON_AS_POSSIBLE |  | 500 | 318894 | 806400 | 487505 | 40.0 | 2025-05-26T08:00:00.0 | 2025-07-02T17:00:00.0 | 2025-05-26T08:00:00.0 | 2026-11-16T17:00:00.0 | 2025-05-26T08:00:00.0 | 43 | True | 2024-03-13T14:56:00.0 | 2025-05-27T17:00:00.0 | 2025-05-27T17:00:00.0 | 2.3 | FIXED_DURATION | PRORATED | True | True | 2025-06-10T09:36:00.0 | 00000000-0000-0000-0000-000000000226 | True | PRORATED | 806400 | 2025-07-02T17:00:00.0 | 2025-05-26T08:00:00.0 | True | 2025-07-02T17:00:00.0 | 40.0 | 10310400 | 10310400 | 43 | True | 2 | 10310400 | 21 |  |  |  |  |  |  |  |  |  |  |  |  |
| 2025-05-26T08:00:00.0 | ed | Struct-Floor-MetalDeck-L2 | 2.3.1 | AS_SOON_AS_POSSIBLE |  | 500 | 57600 | 57600 |  | 100.0 | 2025-05-26T08:00:00.0 | 2025-05-27T17:00:00.0 | 2025-05-26T08:00:00.0 | 2025-05-27T17:00:00.0 | 2025-05-26T08:00:00.0 | 44 |  | 2024-03-13T14:56:00.0 | 2025-05-27T17:00:00.0 | 2025-05-27T17:00:00.0 | 2.3.1 |  | PRORATED | True | True | 2025-05-27T17:00:00.0 | 00000000-0000-0000-0000-000000000070 | True | PRORATED | 57600 | 2025-05-27T17:00:00.0 | 2025-05-26T08:00:00.0 | True | 2025-05-27T17:00:00.0 | 100.0 |  |  | 44 |  | 3 |  | 43 | 35 44 50 FS | Building > Level 2 | Structural > Metal Deck | Construct | Sets->Structural->Floors->Metal Decking (By Level)->Struct-Floor-MetalDeck-L2 | 2025-05-26T08:00:00.0 |  |  | 100.0 | 2025-05-27T17:00:00.0 | 37 37 44 FS |  |
| 2025-06-03T08:00:00.0 | ed | Struct-Floor-MetalDeck-L3 | 2.3.2 | AS_SOON_AS_POSSIBLE |  | 500 | 115200 | 115200 |  | 100.0 | 2025-06-03T08:00:00.0 | 2025-06-06T17:00:00.0 | 2025-06-03T08:00:00.0 | 2025-06-06T17:00:00.0 | 2025-06-03T08:00:00.0 | 45 |  | 2024-03-13T14:56:00.0 | 2025-06-06T17:00:00.0 | 2025-06-06T17:00:00.0 | 2.3.2 |  | PRORATED | True | True | 2025-06-06T17:00:00.0 | 00000000-0000-0000-0000-000000000182 | True | PRORATED | 115200 | 2025-06-06T17:00:00.0 | 2025-06-03T08:00:00.0 | True | 2025-06-06T17:00:00.0 | 100.0 |  |  | 45 |  | 3 |  | 43 | 36 45 51 FS, 47 45 57 FS | Building > Level 3 | Structural > Metal Deck | Construct | Sets->Structural->Floors->Metal Decking (By Level)->Struct-Floor-MetalDeck-L3 | 2025-06-03T08:00:00.0 |  |  | 100.0 | 2025-06-06T17:00:00.0 | 38 39 45 FS |  |
| 2025-06-12T08:00:00.0 | ed | Struct-Floor-MetalDeck-L4 | 2.3.3 | AS_SOON_AS_POSSIBLE |  | 500 | 69120 | 115200 | 46080 | 60.0 | 2025-06-12T08:00:00.0 | 2025-06-17T17:00:00.0 | 2025-06-12T08:00:00.0 | 2026-11-11T17:00:00.0 | 2025-06-12T08:00:00.0 | 46 |  | 2024-03-13T14:56:00.0 | 2025-06-16T11:12:00.0 | 2025-06-16T11:12:00.0 | 2.3.3 |  | PRORATED | True | True | 2025-06-16T11:12:00.0 | 00000000-0000-0000-0000-000000000143 | True | PRORATED | 115200 | 2025-06-17T17:00:00.0 | 2025-06-12T08:00:00.0 | True | 2025-06-17T17:00:00.0 | 60.0 |  | 10540800 | 46 |  | 3 | 10540800 | 43 | 43 46 52 FS | Building > Level 4 | Structural > Metal Deck | Construct | Sets->Structural->Floors->Metal Decking (By Level)->Struct-Floor-MetalDeck-L4 | 2025-06-12T08:00:00.0 |  |  |  |  | 39 41 46 FS |  |
| 2025-06-16T08:00:00.0 | ed | Struct-Floor-MetalDeck-L5 | 2.3.4 | AS_SOON_AS_POSSIBLE | True | 500 |  | 86400 | 86400 |  | 2025-06-16T08:00:00.0 | 2025-06-18T17:00:00.0 | 2025-06-16T08:00:00.0 | 2025-06-18T17:00:00.0 |  | 47 |  | 2024-03-13T14:56:00.0 |  |  | 2.3.4 |  | PRORATED | True | True |  | 00000000-0000-0000-0000-000000000218 | True | PRORATED | 86400 | 2025-06-18T17:00:00.0 | 2025-06-16T08:00:00.0 | True | 2025-06-18T17:00:00.0 |  |  |  | 47 |  | 3 |  | 43 | 41 47 48 FS, 44 47 53 FS | Building > Level 5 | Structural > Metal Deck | Construct | Sets->Structural->Floors->Metal Decking (By Level)->Struct-Floor-MetalDeck-L5 | 2025-06-13T17:00:00.0 |  |  |  |  | 40 42 47 FS |  |
| 2025-06-19T08:00:00.0 | ed | Struct-Floor-MetalDeck-L6 | 2.3.5 | AS_SOON_AS_POSSIBLE | True | 500 |  | 115200 | 115200 |  | 2025-06-19T08:00:00.0 | 2025-06-24T17:00:00.0 | 2025-06-19T08:00:00.0 | 2025-06-24T17:00:00.0 |  | 48 |  | 2024-03-13T14:56:00.0 |  |  | 2.3.5 |  | PRORATED | True | True |  | 00000000-0000-0000-0000-000000000141 | True | PRORATED | 115200 | 2025-06-24T17:00:00.0 | 2025-06-19T08:00:00.0 | True | 2025-06-24T17:00:00.0 |  |  |  | 48 |  | 3 |  | 43 | 42 48 49 FS, 45 48 54 FS | Building > Level 6 | Structural > Metal Deck | Construct | Sets->Structural->Floors->Metal Decking (By Level)->Struct-Floor-MetalDeck-L6 | 2025-06-18T17:00:00.0 |  |  |  |  | 41 47 48 FS |  |
| 2025-06-25T08:00:00.0 | ed | Struct-Floor-MetalDeck-L7 | 2.3.6 | AS_SOON_AS_POSSIBLE | True | 500 |  | 86400 | 86400 |  | 2025-06-25T08:00:00.0 | 2025-06-27T17:00:00.0 | 2025-06-25T08:00:00.0 | 2025-06-27T17:00:00.0 |  | 49 |  | 2024-03-13T14:56:00.0 |  |  | 2.3.6 |  | PRORATED | True | True |  | 00000000-0000-0000-0000-000000000030 | True | PRORATED | 86400 | 2025-06-27T17:00:00.0 | 2025-06-25T08:00:00.0 | True | 2025-06-27T17:00:00.0 |  |  |  | 49 |  | 3 |  | 43 | 46 49 55 FS | Building > Level 7 | Structural > Metal Deck | Construct | Sets->Structural->Floors->Metal Decking (By Level)->Struct-Floor-MetalDeck-L7 | 2025-06-24T17:00:00.0 |  |  |  |  | 42 48 49 FS |  |
| 2025-05-28T08:00:00.0 | ed | Struct-Floor-Concrete-L2 | 2.3.7 | AS_SOON_AS_POSSIBLE |  | 500 | 144000 | 144000 |  | 100.0 | 2025-05-28T08:00:00.0 | 2025-06-03T17:00:00.0 | 2025-05-28T08:00:00.0 | 2025-06-03T17:00:00.0 | 2025-05-28T08:00:00.0 | 50 |  | 2024-03-13T14:56:00.0 | 2025-06-03T17:00:00.0 | 2025-06-03T17:00:00.0 | 2.3.7 |  | PRORATED | True | True | 2025-06-03T17:00:00.0 | 00000000-0000-0000-0000-000000000024 | True | PRORATED | 144000 | 2025-06-03T17:00:00.0 | 2025-05-28T08:00:00.0 | True | 2025-06-03T17:00:00.0 | 100.0 |  |  | 50 |  | 3 |  | 43 |  | Building > Level 2 | Structural > Concrete | Construct | Sets->Structural->Floors->Concrete (By Level)->Struct-Floor-Concrete-L2 | 2025-05-28T08:00:00.0 |  |  | 100.0 | 2025-06-03T17:00:00.0 | 35 44 50 FS |  |
| 2025-06-09T08:00:00.0 | ed | Struct-Floor-Concrete-L3 | 2.3.8 | AS_SOON_AS_POSSIBLE |  | 500 | 115200 | 115200 |  | 100.0 | 2025-06-09T08:00:00.0 | 2025-06-12T17:00:00.0 | 2025-06-09T08:00:00.0 | 2025-06-12T17:00:00.0 | 2025-06-09T08:00:00.0 | 51 |  | 2024-03-13T14:56:00.0 | 2025-06-12T17:00:00.0 | 2025-06-12T17:00:00.0 | 2.3.8 |  | PRORATED | True | True | 2025-06-12T17:00:00.0 | 00000000-0000-0000-0000-000000000015 | True | PRORATED | 115200 | 2025-06-12T17:00:00.0 | 2025-06-09T08:00:00.0 | True | 2025-06-12T17:00:00.0 | 100.0 |  |  | 51 |  | 3 |  | 43 |  | Building > Level 3 | Structural > Concrete | Construct | Sets->Structural->Floors->Concrete (By Level)->Struct-Floor-Concrete-L3 | 2025-06-09T08:00:00.0 |  |  | 100.0 | 2025-06-12T17:00:00.0 | 36 45 51 FS |  |
| 2025-06-18T08:00:00.0 | ed | Struct-Floor-Concrete-L4 | 2.3.9 | AS_SOON_AS_POSSIBLE |  | 500 |  | 86400 | 86400 |  | 2025-06-18T08:00:00.0 | 2025-06-20T17:00:00.0 | 2026-11-12T08:00:00.0 | 2026-11-16T17:00:00.0 |  | 52 |  | 2024-03-13T14:56:00.0 |  |  | 2.3.9 |  | PRORATED | True | True |  | 00000000-0000-0000-0000-000000000017 | True | PRORATED | 86400 | 2025-06-20T17:00:00.0 | 2025-06-18T08:00:00.0 | True | 2025-06-20T17:00:00.0 |  | 10540800 | 10540800 | 52 |  | 3 | 10540800 | 43 |  | Building > Level 4 | Structural > Concrete | Construct | Sets->Structural->Floors->Concrete (By Level)->Struct-Floor-Concrete-L4 | 2025-06-17T17:00:00.0 |  |  |  |  | 43 46 52 FS | 10540800 |
| 2025-06-19T08:00:00.0 | ed | Struct-Floor-Concrete-L5 | 2.3.10 | AS_SOON_AS_POSSIBLE |  | 500 |  | 115200 | 115200 |  | 2025-06-19T08:00:00.0 | 2025-06-24T17:00:00.0 | 2026-11-11T08:00:00.0 | 2026-11-16T17:00:00.0 |  | 53 |  | 2024-03-13T14:56:00.0 |  |  | 2.3.10 |  | PRORATED | True | True |  | 00000000-0000-0000-0000-000000000204 | True | PRORATED | 115200 | 2025-06-24T17:00:00.0 | 2025-06-19T08:00:00.0 | True | 2025-06-24T17:00:00.0 |  | 10483200 | 10483200 | 53 |  | 3 | 10483200 | 43 |  | Building > Level 5 | Structural > Concrete | Construct | Sets->Structural->Floors->Concrete (By Level)->Struct-Floor-Concrete-L5 | 2025-06-18T17:00:00.0 |  |  |  |  | 44 47 53 FS | 10483200 |
| 2025-06-25T08:00:00.0 | ed | Struct-Floor-Concrete-L6 | 2.3.11 | AS_SOON_AS_POSSIBLE |  | 500 |  | 144000 | 144000 |  | 2025-06-25T08:00:00.0 | 2025-07-01T17:00:00.0 | 2026-11-10T08:00:00.0 | 2026-11-16T17:00:00.0 |  | 54 |  | 2024-03-13T14:56:00.0 |  |  | 2.3.11 |  | PRORATED | True | True |  | 00000000-0000-0000-0000-000000000043 | True | PRORATED | 144000 | 2025-07-01T17:00:00.0 | 2025-06-25T08:00:00.0 | True | 2025-07-01T17:00:00.0 |  | 10339200 | 10339200 | 54 |  | 3 | 10339200 | 43 |  | Building > Level 6 | Structural > Concrete | Construct | Sets->Structural->Floors->Concrete (By Level)->Struct-Floor-Concrete-L6 | 2025-06-24T17:00:00.0 |  |  |  |  | 45 48 54 FS | 10339200 |
| 2025-06-30T08:00:00.0 | ed | Struct-Floor-Concrete-L7 | 2.3.12 | AS_SOON_AS_POSSIBLE | True | 500 |  | 86400 | 86400 |  | 2025-06-30T08:00:00.0 | 2025-07-02T17:00:00.0 | 2025-06-30T08:00:00.0 | 2025-07-02T17:00:00.0 |  | 55 |  | 2024-03-13T14:56:00.0 |  |  | 2.3.12 |  | PRORATED | True | True |  | 00000000-0000-0000-0000-000000000133 | True | PRORATED | 86400 | 2025-07-02T17:00:00.0 | 2025-06-30T08:00:00.0 | True | 2025-07-02T17:00:00.0 |  |  |  | 55 |  | 3 |  | 43 | 49 55 62 FS | Building > Level 7 | Structural > Concrete | Construct | Sets->Structural->Floors->Concrete (By Level)->Struct-Floor-Concrete-L7 | 2025-06-27T17:00:00.0 |  |  |  |  | 46 49 55 FS |  |
| 2025-06-09T08:00:00.0 | ed | Dock Stairs | 2.4 | AS_SOON_AS_POSSIBLE |  | 500 | 57600 | 57600 |  | 100.0 | 2025-06-09T08:00:00.0 | 2025-06-10T17:00:00.0 | 2025-06-09T08:00:00.0 | 2025-06-10T17:00:00.0 | 2025-06-09T08:00:00.0 | 56 | True | 2024-03-13T14:56:00.0 | 2025-06-09T17:00:00.0 | 2025-06-09T17:00:00.0 | 2.4 | FIXED_DURATION | PRORATED | True | True | 2025-06-10T17:00:00.0 | 00000000-0000-0000-0000-000000000186 | True | PRORATED | 57600 | 2025-06-10T17:00:00.0 | 2025-06-09T08:00:00.0 | True | 2025-06-10T17:00:00.0 | 100.0 |  |  | 56 | True | 2 |  | 21 |  |  |  |  |  |  |  |  | 100.0 | 2025-06-10T17:00:00.0 |  |  |
| 2025-06-09T08:00:00.0 | ed | Struct-Dock_StairSteps | 2.4.1 | AS_SOON_AS_POSSIBLE |  | 500 | 28800 | 28800 |  | 100.0 | 2025-06-09T08:00:00.0 | 2025-06-09T17:00:00.0 | 2025-06-09T08:00:00.0 | 2025-06-09T17:00:00.0 | 2025-06-09T08:00:00.0 | 57 |  | 2024-03-13T14:56:00.0 | 2025-06-09T17:00:00.0 | 2025-06-09T17:00:00.0 | 2.4.1 |  | PRORATED | True | True | 2025-06-09T17:00:00.0 | 00000000-0000-0000-0000-000000000067 | True | PRORATED | 28800 | 2025-06-09T17:00:00.0 | 2025-06-09T08:00:00.0 | True | 2025-06-09T17:00:00.0 | 100.0 |  |  | 57 |  | 3 |  | 56 | 48 57 58 FS | Building > Dock | Structural > Stair Steps | Construct | Sets->Structural->Dock Stairs->Struct-Dock_StairSteps | 2025-06-09T08:00:00.0 |  |  | 100.0 | 2025-06-09T17:00:00.0 | 47 45 57 FS |  |
| 2025-06-10T08:00:00.0 | ed | Struct-Dock_Railing | 2.4.2 | AS_SOON_AS_POSSIBLE |  | 500 | 28800 | 28800 |  | 100.0 | 2025-06-10T08:00:00.0 | 2025-06-10T17:00:00.0 | 2025-06-10T08:00:00.0 | 2025-06-10T17:00:00.0 | 2025-06-10T08:00:00.0 | 58 |  | 2024-03-13T14:56:00.0 | 2025-06-10T17:00:00.0 | 2025-06-10T17:00:00.0 | 2.4.2 |  | PRORATED | True | True | 2025-06-10T17:00:00.0 | 00000000-0000-0000-0000-000000000096 | True | PRORATED | 28800 | 2025-06-10T17:00:00.0 | 2025-06-10T08:00:00.0 | True | 2025-06-10T17:00:00.0 | 100.0 |  |  | 58 |  | 3 |  | 56 |  | Building > Dock | Structural > Railing | Construct | Sets->Structural->Dock Stairs->Struct-Dock_Railing | 2025-06-10T08:00:00.0 |  |  | 100.0 | 2025-06-10T17:00:00.0 | 48 57 58 FS |  |
| 2025-07-03T08:00:00.0 | ed | Architectural | 3 | AS_SOON_AS_POSSIBLE | True | 500 |  | 10310400 | 10310400 |  | 2025-07-03T08:00:00.0 | 2026-11-16T17:00:00.0 | 2025-07-03T08:00:00.0 | 2026-11-16T17:00:00.0 |  | 59 | True | 2024-03-13T14:56:00.0 |  |  | 3 | FIXED_DURATION | PRORATED | True | True |  | 00000000-0000-0000-0000-000000000127 | True | PRORATED | 10310400 | 2026-11-16T17:00:00.0 | 2025-07-03T08:00:00.0 | True | 2026-11-16T17:00:00.0 |  |  |  | 59 | True | 1 |  | 0 |  |  |  |  |  |  |  |  |  |  |  |  |
| 2025-07-03T08:00:00.0 | ed | Exterior | 3.1 | AS_SOON_AS_POSSIBLE | True | 500 |  | 2433600 | 2433600 |  | 2025-07-03T08:00:00.0 | 2025-10-29T12:00:00.0 | 2025-07-03T08:00:00.0 | 2026-11-16T17:00:00.0 |  | 60 | True | 2024-03-13T14:56:00.0 |  |  | 3.1 | FIXED_DURATION | PRORATED | True | True |  | 00000000-0000-0000-0000-000000000171 | True | PRORATED | 2433600 | 2025-10-29T12:00:00.0 | 2025-07-03T08:00:00.0 | True | 2025-10-29T12:00:00.0 |  |  |  | 60 | True | 2 | 7876800 | 59 |  |  |  |  |  |  |  |  |  |  |  |  |
| 2025-07-03T08:00:00.0 | ed | Walls | 3.1.1 | AS_SOON_AS_POSSIBLE | True | 500 |  | 1670400 | 1670400 |  | 2025-07-03T08:00:00.0 | 2025-09-22T17:00:00.0 | 2025-07-03T08:00:00.0 | 2026-11-16T17:00:00.0 |  | 61 | True | 2024-03-13T14:56:00.0 |  |  | 3.1.1 | FIXED_DURATION | PRORATED | True | True |  | 00000000-0000-0000-0000-000000000196 | True | PRORATED | 1670400 | 2025-09-22T17:00:00.0 | 2025-07-03T08:00:00.0 | True | 2025-09-22T17:00:00.0 |  |  |  | 61 | True | 3 | 8640000 | 60 |  |  |  |  |  |  |  |  |  |  |  |  |
| 2025-07-03T08:00:00.0 | ed | Scaffolding | 3.1.1.1 | AS_SOON_AS_POSSIBLE | True | 500 |  | 633600 | 633600 |  | 2025-07-03T08:00:00.0 | 2025-08-01T17:00:00.0 | 2025-07-03T08:00:00.0 | 2025-08-01T17:00:00.0 |  | 62 |  | 2024-03-13T14:56:00.0 |  |  | 3.1.1.1 |  | PRORATED | True | True |  | 00000000-0000-0000-0000-000000000273 | True | PRORATED | 633600 | 2025-08-01T17:00:00.0 | 2025-07-03T08:00:00.0 | True | 2025-08-01T17:00:00.0 |  |  |  | 62 |  | 4 |  | 61 | 50 62 63 28800 SS | Building | Equipment > Scaffolding | Temporary | Sets->Site->Scaffolding | 2025-07-02T17:00:00.0 |  |  |  |  | 49 55 62 FS |  |
| 2025-07-04T08:00:00.0 | ed | Arch-Ext-Wall-L1 | 3.1.1.2 | AS_SOON_AS_POSSIBLE | True | 500 |  | 172800 | 172800 |  | 2025-07-04T08:00:00.0 | 2025-07-11T17:00:00.0 | 2025-07-04T08:00:00.0 | 2025-07-11T17:00:00.0 |  | 63 |  | 2024-03-13T14:56:00.0 |  |  | 3.1.1.2 |  | PRORATED | True | True |  | 00000000-0000-0000-0000-000000000267 | True | PRORATED | 172800 | 2025-07-11T17:00:00.0 | 2025-07-04T08:00:00.0 | True | 2025-07-11T17:00:00.0 |  |  |  | 63 |  | 4 |  | 61 | 51 63 64 FS, 58 63 72 FS | Building > Level 1 | Architectural > Exterior Wall | Construct | Sets->Architectural->Exterior->Walls->Arch-Ext-Wall-L1 | 2025-07-03T17:00:00.0 |  |  |  |  | 50 62 63 28800 SS |  |
| 2025-07-14T08:00:00.0 | ed | Arch-Ext-Wall-L2 | 3.1.1.3 | AS_SOON_AS_POSSIBLE | True | 500 |  | 172800 | 172800 |  | 2025-07-14T08:00:00.0 | 2025-07-21T17:00:00.0 | 2025-07-14T08:00:00.0 | 2025-07-21T17:00:00.0 |  | 64 |  | 2024-03-13T14:56:00.0 |  |  | 3.1.1.3 |  | PRORATED | True | True |  | 00000000-0000-0000-0000-000000000131 | True | PRORATED | 172800 | 2025-07-21T17:00:00.0 | 2025-07-14T08:00:00.0 | True | 2025-07-21T17:00:00.0 |  |  |  | 64 |  | 4 |  | 61 | 52 64 65 FS, 59 64 73 FS | Building > Level 2 | Architectural > Exterior Wall | Construct | Sets->Architectural->Exterior->Walls->Arch-Ext-Wall-L2 | 2025-07-11T17:00:00.0 |  |  |  |  | 51 63 64 FS |  |
| 2025-07-22T08:00:00.0 | ed | Arch-Ext-Wall-L3 | 3.1.1.4 | AS_SOON_AS_POSSIBLE | True | 500 |  | 172800 | 172800 |  | 2025-07-22T08:00:00.0 | 2025-07-29T17:00:00.0 | 2025-07-22T08:00:00.0 | 2025-07-29T17:00:00.0 |  | 65 |  | 2024-03-13T14:56:00.0 |  |  | 3.1.1.4 |  | PRORATED | True | True |  | 00000000-0000-0000-0000-000000000113 | True | PRORATED | 172800 | 2025-07-29T17:00:00.0 | 2025-07-22T08:00:00.0 | True | 2025-07-29T17:00:00.0 |  |  |  | 65 |  | 4 |  | 61 | 53 65 66 FS, 60 65 74 FS | Building > Level 3 | Architectural > Exterior Wall | Construct | Sets->Architectural->Exterior->Walls->Arch-Ext-Wall-L3 | 2025-07-21T17:00:00.0 |  |  |  |  | 52 64 65 FS |  |
| 2025-07-30T08:00:00.0 | ed | Arch-Ext-Wall-L4 | 3.1.1.5 | AS_SOON_AS_POSSIBLE | True | 500 |  | 288000 | 288000 |  | 2025-07-30T08:00:00.0 | 2025-08-12T17:00:00.0 | 2025-07-30T08:00:00.0 | 2025-08-12T17:00:00.0 |  | 66 |  | 2024-03-13T14:56:00.0 |  |  | 3.1.1.5 |  | PRORATED | True | True |  | 00000000-0000-0000-0000-000000000103 | True | PRORATED | 288000 | 2025-08-12T17:00:00.0 | 2025-07-30T08:00:00.0 | True | 2025-08-12T17:00:00.0 |  |  |  | 66 |  | 4 |  | 61 | 54 66 67 FS, 61 66 75 FS | Building > Level 4 | Architectural > Exterior Wall | Construct | Sets->Architectural->Exterior->Walls->Arch-Ext-Wall-L4 | 2025-07-29T17:00:00.0 |  |  |  |  | 53 65 66 FS |  |
| 2025-08-13T08:00:00.0 | ed | Arch-Ext-Wall-L5 | 3.1.1.6 | AS_SOON_AS_POSSIBLE | True | 500 |  | 230400 | 230400 |  | 2025-08-13T08:00:00.0 | 2025-08-22T17:00:00.0 | 2025-08-13T08:00:00.0 | 2025-08-22T17:00:00.0 |  | 67 |  | 2024-03-13T14:56:00.0 |  |  | 3.1.1.6 |  | PRORATED | True | True |  | 00000000-0000-0000-0000-000000000049 | True | PRORATED | 230400 | 2025-08-22T17:00:00.0 | 2025-08-13T08:00:00.0 | True | 2025-08-22T17:00:00.0 |  |  |  | 67 |  | 4 |  | 61 | 55 67 68 FS, 62 67 76 FS | Building > Level 5 | Architectural > Exterior Wall | Construct | Sets->Architectural->Exterior->Walls->Arch-Ext-Wall-L5 | 2025-08-12T17:00:00.0 |  |  |  |  | 54 66 67 FS |  |
| 2025-08-25T08:00:00.0 | ed | Arch-Ext-Wall-L6 | 3.1.1.7 | AS_SOON_AS_POSSIBLE | True | 500 |  | 230400 | 230400 |  | 2025-08-25T08:00:00.0 | 2025-09-03T17:00:00.0 | 2025-08-25T08:00:00.0 | 2025-09-03T17:00:00.0 |  | 68 |  | 2024-03-13T14:56:00.0 |  |  | 3.1.1.7 |  | PRORATED | True | True |  | 00000000-0000-0000-0000-000000000146 | True | PRORATED | 230400 | 2025-09-03T17:00:00.0 | 2025-08-25T08:00:00.0 | True | 2025-09-03T17:00:00.0 |  |  |  | 68 |  | 4 |  | 61 | 56 68 69 FS, 63 68 77 FS | Building > Level 6 | Architectural > Exterior Wall | Construct | Sets->Architectural->Exterior->Walls->Arch-Ext-Wall-L6 | 2025-08-22T17:00:00.0 |  |  |  |  | 55 67 68 FS |  |
| 2025-09-04T08:00:00.0 | ed | Arch-Ext-Wall-L7 | 3.1.1.8 | AS_SOON_AS_POSSIBLE |  | 500 |  | 288000 | 288000 |  | 2025-09-04T08:00:00.0 | 2025-09-17T17:00:00.0 | 2026-10-29T08:00:00.0 | 2026-11-11T17:00:00.0 |  | 69 |  | 2024-03-13T14:56:00.0 |  |  | 3.1.1.8 |  | PRORATED | True | True |  | 00000000-0000-0000-0000-000000000039 | True | PRORATED | 288000 | 2025-09-17T17:00:00.0 | 2025-09-04T08:00:00.0 | True | 2025-09-17T17:00:00.0 |  |  | 8640000 | 69 |  | 4 | 8640000 | 61 | 57 69 70 FS | Building > Level 7 | Architectural > Exterior Wall | Construct | Sets->Architectural->Exterior->Walls->Arch-Ext-Wall-L7 | 2025-09-03T17:00:00.0 |  |  |  |  | 56 68 69 FS | 8640000 |

| start | leveling_delay_units | name | wbs | constraint_type | critical | priority | duration | remaining_duration | early_start | early_finish | late_start | late_finish | unique_id | summary | created | outline_number | type | fixed_cost_accrual | leveling_can_split | level_assignments | guid | active | baseline_fixed_cost_accrual | scheduled_duration | scheduled_finish | scheduled_start | recalc_outline_codes | finish | free_slack | total_slack | id | rollup | outline_level | finish_slack | parent_task_unique_id | successors | text2 | text3 | text4 | text5 | summary_progress | predecessors | start_slack |
| --- | --- | --- | --- | --- | --- | --- | --- | --- | --- | --- | --- | --- | --- | --- | --- | --- | --- | --- | --- | --- | --- | --- | --- | --- | --- | --- | --- | --- | --- | --- | --- | --- | --- | --- | --- | --- | --- | --- | --- | --- | --- | --- | --- |
| 2025-09-18T08:00:00.0 | ed | Arch-Ext-BeamSoffit+Enclosure | 3.1.1.9 | AS_SOON_AS_POSSIBLE |  | 500 | 86400 | 86400 | 2025-09-18T08:00:00.0 | 2025-09-22T17:00:00.0 | 2026-11-12T08:00:00.0 | 2026-11-16T17:00:00.0 | 70 |  | 2024-03-13T14:56:00.0 | 3.1.1.9 |  | PRORATED | True | True | 00000000-0000-0000-0000-000000000111 | True | PRORATED | 86400 | 2025-09-22T17:00:00.0 | 2025-09-18T08:00:00.0 | True | 2025-09-22T17:00:00.0 | 8640000 | 8640000 | 70 |  | 4 | 8640000 | 61 |  | Building > Roof | Architectural > Beam Soffit, Architectural > Beam Enclosure | Construct | Sets->Architectural->Exterior->Arch-Ext-BeamSoffit+Enclosure | 2025-09-17T17:00:00.0 | 57 69 70 FS | 8640000 |
| 2025-07-14T08:00:00.0 | ed | Curtain Walls and Windows | 3.1.2 | AS_SOON_AS_POSSIBLE |  | 500 | 1324800 | 1324800 | 2025-07-14T08:00:00.0 | 2025-09-15T17:00:00.0 | 2025-09-04T08:00:00.0 | 2026-11-16T17:00:00.0 | 71 | True | 2024-03-13T14:56:00.0 | 3.1.2 | FIXED_DURATION | PRORATED | True | True | 00000000-0000-0000-0000-000000000227 | True | PRORATED | 1324800 | 2025-09-15T17:00:00.0 | 2025-07-14T08:00:00.0 | True | 2025-09-15T17:00:00.0 | 1094400 | 1094400 | 71 | True | 3 | 8784000 | 60 |  |  |  |  |  |  |  | 1094400 |
| 2025-07-14T08:00:00.0 | ed | Arch-Ext-CurtWall_Windows-L1 | 3.1.2.1 | AS_SOON_AS_POSSIBLE |  | 500 | 172800 | 172800 | 2025-07-14T08:00:00.0 | 2025-07-21T17:00:00.0 | 2026-11-09T08:00:00.0 | 2026-11-16T17:00:00.0 | 72 |  | 2024-03-13T14:56:00.0 | 3.1.2.1 |  | PRORATED | True | True | 00000000-0000-0000-0000-000000000280 | True | PRORATED | 172800 | 2025-07-21T17:00:00.0 | 2025-07-14T08:00:00.0 | True | 2025-07-21T17:00:00.0 | 9936000 | 9936000 | 72 |  | 4 | 9936000 | 71 |  | Building > Level 1 | Architectural > Curtain Wall | Construct | Sets->Architectural->Exterior->Curtain Walls and Windows->Arch-Ext-CurtWall_Windows-L1 | 2025-07-11T17:00:00.0 | 58 63 72 FS | 9936000 |
| 2025-07-22T08:00:00.0 | ed | Arch-Ext-CurtWall_Windows-L2 | 3.1.2.2 | AS_SOON_AS_POSSIBLE |  | 500 | 172800 | 172800 | 2025-07-22T08:00:00.0 | 2025-07-29T17:00:00.0 | 2026-11-06T08:00:00.0 | 2026-11-13T17:00:00.0 | 73 |  | 2024-03-13T14:56:00.0 | 3.1.2.2 |  | PRORATED | True | True | 00000000-0000-0000-0000-000000000237 | True | PRORATED | 172800 | 2025-07-29T17:00:00.0 | 2025-07-22T08:00:00.0 | True | 2025-07-29T17:00:00.0 |  | 9734400 | 73 |  | 4 | 9734400 | 71 | 65 73 81 FS, 69 73 86 FS | Building > Level 2 | Architectural > Curtain Wall | Construct | Sets->Architectural->Exterior->Curtain Walls and Windows->Arch-Ext-CurtWall_Windows-L2 | 2025-07-21T17:00:00.0 | 59 64 73 FS | 9734400 |
| 2025-07-30T08:00:00.0 | ed | Arch-Ext-CurtWall-L3 | 3.1.2.3 | AS_SOON_AS_POSSIBLE |  | 500 | 230400 | 230400 | 2025-07-30T08:00:00.0 | 2025-08-08T17:00:00.0 | 2026-10-26T08:00:00.0 | 2026-11-04T17:00:00.0 | 74 |  | 2024-03-13T14:56:00.0 | 3.1.2.3 |  | PRORATED | True | True | 00000000-0000-0000-0000-000000000109 | True | PRORATED | 230400 | 2025-08-08T17:00:00.0 | 2025-07-30T08:00:00.0 | True | 2025-08-08T17:00:00.0 |  | 9302400 | 74 |  | 4 | 9302400 | 71 | 70 74 87 FS | Building > Level 3 | Architectural > Curtain Wall | Construct | Sets->Architectural->Exterior->Curtain Walls and Windows->Arch-Ext-CurtWall-L3 | 2025-07-29T17:00:00.0 | 60 65 74 FS | 9302400 |
| 2025-08-13T08:00:00.0 | ed | Arch-Ext-CurtWall-L4 | 3.1.2.4 | AS_SOON_AS_POSSIBLE |  | 500 | 201600 | 201600 | 2025-08-13T08:00:00.0 | 2025-08-21T17:00:00.0 | 2026-11-04T08:00:00.0 | 2026-11-12T17:00:00.0 | 75 |  | 2024-03-13T14:56:00.0 | 3.1.2.4 |  | PRORATED | True | True | 00000000-0000-0000-0000-000000000318 | True | PRORATED | 201600 | 2025-08-21T17:00:00.0 | 2025-08-13T08:00:00.0 | True | 2025-08-21T17:00:00.0 |  | 9216000 | 75 |  | 4 | 9216000 | 71 | 71 75 88 FS | Building > Level 4 | Architectural > Curtain Wall | Construct | Sets->Architectural->Exterior->Curtain Walls and Windows->Arch-Ext-CurtWall-L4 | 2025-08-12T17:00:00.0 | 61 66 75 FS | 9216000 |
| 2025-08-25T08:00:00.0 | ed | Arch-Ext-CurtWall-L5 | 3.1.2.5 | AS_SOON_AS_POSSIBLE |  | 500 | 230400 | 230400 | 2025-08-25T08:00:00.0 | 2025-09-03T17:00:00.0 | 2026-10-28T08:00:00.0 | 2026-11-06T17:00:00.0 | 76 |  | 2024-03-13T14:56:00.0 | 3.1.2.5 |  | PRORATED | True | True | 00000000-0000-0000-0000-000000000057 | True | PRORATED | 230400 | 2025-09-03T17:00:00.0 | 2025-08-25T08:00:00.0 | True | 2025-09-03T17:00:00.0 |  | 8841600 | 76 |  | 4 | 8841600 | 71 | 64 76 79 FS, 72 76 89 FS | Building > Level 5 | Architectural > Curtain Wall | Construct | Sets->Architectural->Exterior->Curtain Walls and Windows->Arch-Ext-CurtWall-L5 | 2025-08-22T17:00:00.0 | 62 67 76 FS | 8841600 |
| 2025-09-04T08:00:00.0 | ed | Arch-Ext-CurtWall-L6 | 3.1.2.6 | AS_SOON_AS_POSSIBLE | True | 500 | 230400 | 230400 | 2025-09-04T08:00:00.0 | 2025-09-15T17:00:00.0 | 2025-09-04T08:00:00.0 | 2025-09-15T17:00:00.0 | 77 |  | 2024-03-13T14:56:00.0 | 3.1.2.6 |  | PRORATED | True | True | 00000000-0000-0000-0000-000000000281 | True | PRORATED | 230400 | 2025-09-15T17:00:00.0 | 2025-09-04T08:00:00.0 | True | 2025-09-15T17:00:00.0 |  |  | 77 |  | 4 |  | 71 | 66 77 82 FS, 67 77 83 FS, 73 77 90 FS | Building > Level 6 | Architectural > Curtain Wall | Construct | Sets->Architectural->Exterior->Curtain Walls and Windows->Arch-Ext-CurtWall-L6 | 2025-09-03T17:00:00.0 | 63 68 77 FS |  |
| 2025-09-04T08:00:00.0 | ed | Columns and Sweeps | 3.1.3 | AS_SOON_AS_POSSIBLE |  | 500 | 172800 | 172800 | 2025-09-04T08:00:00.0 | 2025-09-11T17:00:00.0 | 2026-11-09T08:00:00.0 | 2026-11-16T17:00:00.0 | 78 | True | 2024-03-13T14:56:00.0 | 3.1.3 | FIXED_DURATION | PRORATED | True | True | 00000000-0000-0000-0000-000000000211 | True | PRORATED | 172800 | 2025-09-11T17:00:00.0 | 2025-09-04T08:00:00.0 | True | 2025-09-11T17:00:00.0 | 8841600 | 8841600 | 78 | True | 3 | 8841600 | 60 |  |  |  |  |  |  |  | 8841600 |
| 2025-09-04T08:00:00.0 | ed | Arch-Ext-Col_Sweeps-L1+L2 | 3.1.3.1 | AS_SOON_AS_POSSIBLE |  | 500 | 172800 | 172800 | 2025-09-04T08:00:00.0 | 2025-09-11T17:00:00.0 | 2026-11-09T08:00:00.0 | 2026-11-16T17:00:00.0 | 79 |  | 2024-03-13T14:56:00.0 | 3.1.3.1 |  | PRORATED | True | True | 00000000-0000-0000-0000-000000000188 | True | PRORATED | 172800 | 2025-09-11T17:00:00.0 | 2025-09-04T08:00:00.0 | True | 2025-09-11T17:00:00.0 | 8841600 | 8841600 | 79 |  | 4 | 8841600 | 78 |  | Building > Level 1, Building > Level 2 | Architectural > Column Sweeps | Construct | Sets->Architectural->Exterior->Columns and Sweeps->Arch-Ext-Col_Sweeps-L1+L2 | 2025-09-03T17:00:00.0 | 64 76 79 FS | 8841600 |
| 2025-07-30T08:00:00.0 | ed | Doors | 3.1.4 | AS_SOON_AS_POSSIBLE |  | 500 | 1022400 | 1022400 | 2025-07-30T08:00:00.0 | 2025-09-17T12:00:00.0 | 2025-09-16T08:00:00.0 | 2026-11-16T17:00:00.0 | 80 | True | 2024-03-13T14:56:00.0 | 3.1.4 | FIXED_DURATION | PRORATED | True | True | 00000000-0000-0000-0000-000000000116 | True | PRORATED | 1022400 | 2025-09-17T12:00:00.0 | 2025-07-30T08:00:00.0 | True | 2025-09-17T12:00:00.0 | 979200 | 979200 | 80 | True | 3 | 8740800 | 60 |  |  |  |  |  |  |  | 979200 |
| 2025-07-30T08:00:00.0 | ed | Arch-Ext-Doors-L1 | 3.1.4.1 | AS_SOON_AS_POSSIBLE |  | 500 | 14400 | 14400 | 2025-07-30T08:00:00.0 | 2025-07-30T12:00:00.0 | 2026-11-16T13:00:00.0 | 2026-11-16T17:00:00.0 | 81 |  | 2024-03-13T14:56:00.0 | 3.1.4.1 |  | PRORATED | True | True | 00000000-0000-0000-0000-000000000144 | True | PRORATED | 14400 | 2025-07-30T12:00:00.0 | 2025-07-30T08:00:00.0 | True | 2025-07-30T12:00:00.0 | 9748800 | 9748800 | 81 |  | 4 | 9748800 | 80 |  | Building > Level 1 | Architectural > Exterior Doors | Construct | Sets->Architectural->Exterior->Doors->Arch-Ext-Doors-L1 | 2025-07-29T17:00:00.0 | 65 73 81 FS | 9748800 |
| 2025-09-16T08:00:00.0 | ed | Arch-Ext-Doors-L6 | 3.1.4.2 | AS_SOON_AS_POSSIBLE |  | 500 | 43200 | 43200 | 2025-09-16T08:00:00.0 | 2025-09-17T12:00:00.0 | 2026-11-13T13:00:00.0 | 2026-11-16T17:00:00.0 | 82 |  | 2024-03-13T14:56:00.0 | 3.1.4.2 |  | PRORATED | True | True | 00000000-0000-0000-0000-000000000302 | True | PRORATED | 43200 | 2025-09-17T12:00:00.0 | 2025-09-16T08:00:00.0 | True | 2025-09-17T12:00:00.0 | 8740800 | 8740800 | 82 |  | 4 | 8740800 | 80 |  | Building > Level 6 | Architectural > Exterior Doors | Construct | Sets->Architectural->Exterior->Doors->Arch-Ext-Doors-L6 | 2025-09-15T17:00:00.0 | 66 77 82 FS | 8740800 |
| 2025-09-16T08:00:00.0 | ed | Arch-Ext-Doors-L7 | 3.1.4.3 | AS_SOON_AS_POSSIBLE | True | 500 | 14400 | 14400 | 2025-09-16T08:00:00.0 | 2025-09-16T12:00:00.0 | 2025-09-16T08:00:00.0 | 2025-09-16T12:00:00.0 | 83 |  | 2024-03-13T14:56:00.0 | 3.1.4.3 |  | PRORATED | True | True | 00000000-0000-0000-0000-000000000260 | True | PRORATED | 14400 | 2025-09-16T12:00:00.0 | 2025-09-16T08:00:00.0 | True | 2025-09-16T12:00:00.0 |  |  | 83 |  | 4 |  | 80 | 68 83 85 FS, 74 83 91 FS | Building > Level 7 | Architectural > Exterior Doors | Construct | Sets->Architectural->Exterior->Doors->Arch-Ext-Doors-L7 | 2025-09-15T17:00:00.0 | 67 77 83 FS |  |
| 2025-07-30T08:00:00.0 | ed | Roof | 3.1.5 | AS_SOON_AS_POSSIBLE |  | 500 | 1310400 | 1310400 | 2025-07-30T08:00:00.0 | 2025-10-01T12:00:00.0 | 2025-09-16T13:00:00.0 | 2026-11-16T17:00:00.0 | 84 | True | 2024-03-13T14:56:00.0 | 3.1.5 | FIXED_DURATION | PRORATED | True | True | 00000000-0000-0000-0000-000000000071 | True | PRORATED | 1310400 | 2025-10-01T12:00:00.0 | 2025-07-30T08:00:00.0 | True | 2025-10-01T12:00:00.0 | 993600 | 993600 | 84 | True | 3 | 8452800 | 60 |  |  |  |  |  |  |  | 993600 |
| 2025-09-16T13:00:00.0 | ed | Arch-Ext-Louver-L6+7 | 3.1.5.1 | AS_SOON_AS_POSSIBLE |  | 500 | 57600 | 57600 | 2025-09-16T13:00:00.0 | 2025-09-18T12:00:00.0 | 2026-11-13T08:00:00.0 | 2026-11-16T17:00:00.0 | 85 |  | 2024-03-13T14:56:00.0 | 3.1.5.1 |  | PRORATED | True | True | 00000000-0000-0000-0000-000000000077 | True | PRORATED | 57600 | 2025-09-18T12:00:00.0 | 2025-09-16T13:00:00.0 | True | 2025-09-18T12:00:00.0 | 8712000 | 8712000 | 85 |  | 4 | 8712000 | 84 |  | Building > Level 6, Building > Level 7 | Architectural > Exterior Louver | Construct | Sets->Architectural->Exterior->Arch-Ext-Louver-L6+7 | 2025-09-16T12:00:00.0 | 68 83 85 FS | 8712000 |
| 2025-07-30T08:00:00.0 | ed | Arch-Ext-Roof-L2 | 3.1.5.2 | AS_SOON_AS_POSSIBLE |  | 500 | 28800 | 28800 | 2025-07-30T08:00:00.0 | 2025-07-30T17:00:00.0 | 2026-11-16T08:00:00.0 | 2026-11-16T17:00:00.0 | 86 |  | 2024-03-13T14:56:00.0 | 3.1.5.2 |  | PRORATED | True | True | 00000000-0000-0000-0000-000000000306 | True | PRORATED | 28800 | 2025-07-30T17:00:00.0 | 2025-07-30T08:00:00.0 | True | 2025-07-30T17:00:00.0 | 9734400 | 9734400 | 86 |  | 4 | 9734400 | 84 |  | Building > Level 2 | Architectural > Roofing | Construct | Sets->Architectural->Exterior->Roof->By Level->Arch-Ext-Roof-L2 | 2025-07-29T17:00:00.0 | 69 73 86 FS | 9734400 |
| 2025-08-11T08:00:00.0 | ed | Arch-Ext-Roof-L3 | 3.1.5.3 | AS_SOON_AS_POSSIBLE |  | 500 | 230400 | 230400 | 2025-08-11T08:00:00.0 | 2025-08-20T17:00:00.0 | 2026-11-05T08:00:00.0 | 2026-11-16T17:00:00.0 | 87 |  | 2024-03-13T14:56:00.0 | 3.1.5.3 |  | PRORATED | True | True | 00000000-0000-0000-0000-000000000142 | True | PRORATED | 230400 | 2025-08-20T17:00:00.0 | 2025-08-11T08:00:00.0 | True | 2025-08-20T17:00:00.0 | 9302400 | 9302400 | 87 |  | 4 | 9302400 | 84 |  | Building > Level 3 | Architectural > Roofing | Construct | Sets->Architectural->Exterior->Roof->By Level->Arch-Ext-Roof-L3 | 2025-08-08T17:00:00.0 | 70 74 87 FS | 9302400 |
| 2025-08-22T08:00:00.0 | ed | Arch-Ext-Roof-L4 | 3.1.5.4 | AS_SOON_AS_POSSIBLE |  | 500 | 57600 | 57600 | 2025-08-22T08:00:00.0 | 2025-08-25T17:00:00.0 | 2026-11-13T08:00:00.0 | 2026-11-16T17:00:00.0 | 88 |  | 2024-03-13T14:56:00.0 | 3.1.5.4 |  | PRORATED | True | True | 00000000-0000-0000-0000-000000000082 | True | PRORATED | 57600 | 2025-08-25T17:00:00.0 | 2025-08-22T08:00:00.0 | True | 2025-08-25T17:00:00.0 | 9216000 | 9216000 | 88 |  | 4 | 9216000 | 84 |  | Building > Level 4 | Architectural > Roofing | Construct | Sets->Architectural->Exterior->Roof->By Level->Arch-Ext-Roof-L4 | 2025-08-21T17:00:00.0 | 71 75 88 FS | 9216000 |
| 2025-09-04T08:00:00.0 | ed | Arch-Ext-Roof-L5 | 3.1.5.5 | AS_SOON_AS_POSSIBLE |  | 500 | 28800 | 28800 | 2025-09-04T08:00:00.0 | 2025-09-04T17:00:00.0 | 2026-11-16T08:00:00.0 | 2026-11-16T17:00:00.0 | 89 |  | 2024-03-13T14:56:00.0 | 3.1.5.5 |  | PRORATED | True | True | 00000000-0000-0000-0000-000000000193 | True | PRORATED | 28800 | 2025-09-04T17:00:00.0 | 2025-09-04T08:00:00.0 | True | 2025-09-04T17:00:00.0 | 8985600 | 8985600 | 89 |  | 4 | 8985600 | 84 |  | Building > Level 5 | Architectural > Roofing | Construct | Sets->Architectural->Exterior->Roof->By Level->Arch-Ext-Roof-L5 | 2025-09-03T17:00:00.0 | 72 76 89 FS | 8985600 |
| 2025-09-16T08:00:00.0 | ed | Arch-Ext-Roof-L6 | 3.1.5.6 | AS_SOON_AS_POSSIBLE |  | 500 | 57600 | 57600 | 2025-09-16T08:00:00.0 | 2025-09-17T17:00:00.0 | 2026-11-13T08:00:00.0 | 2026-11-16T17:00:00.0 | 90 |  | 2024-03-13T14:56:00.0 | 3.1.5.6 |  | PRORATED | True | True | 00000000-0000-0000-0000-000000000097 | True | PRORATED | 57600 | 2025-09-17T17:00:00.0 | 2025-09-16T08:00:00.0 | True | 2025-09-17T17:00:00.0 | 8726400 | 8726400 | 90 |  | 4 | 8726400 | 84 |  | Building > Level 6 | Architectural > Roofing | Construct | Sets->Architectural->Exterior->Roof->By Level->Arch-Ext-Roof-L6 | 2025-09-15T17:00:00.0 | 73 77 90 FS | 8726400 |
| 2025-09-16T13:00:00.0 | ed | Arch-Ext-Roof-L7 | 3.1.5.7 | AS_SOON_AS_POSSIBLE | True | 500 | 316800 | 316800 | 2025-09-16T13:00:00.0 | 2025-10-01T12:00:00.0 | 2025-09-16T13:00:00.0 | 2025-10-01T12:00:00.0 | 91 |  | 2024-03-13T14:56:00.0 | 3.1.5.7 |  | PRORATED | True | True | 00000000-0000-0000-0000-000000000255 | True | PRORATED | 316800 | 2025-10-01T12:00:00.0 | 2025-09-16T13:00:00.0 | True | 2025-10-01T12:00:00.0 |  |  | 91 |  | 4 |  | 84 | 75 91 93 FS, 78 91 97 FS, 79 91 98 FS | Building > Level 7 | Architectural > Roofing | Construct | Sets->Architectural->Exterior->Roof->By Level->Arch-Ext-Roof-L7 | 2025-09-16T12:00:00.0 | 74 83 91 FS |  |
| 2025-10-01T13:00:00.0 | ed | Courtyard | 3.1.6 | AS_SOON_AS_POSSIBLE |  | 500 | 374400 | 374400 | 2025-10-01T13:00:00.0 | 2025-10-20T12:00:00.0 | 2026-10-20T08:00:00.0 | 2026-11-05T17:00:00.0 | 92 | True | 2024-03-13T14:56:00.0 | 3.1.6 | FIXED_DURATION | PRORATED | True | True | 00000000-0000-0000-0000-000000000047 | True | PRORATED | 374400 | 2025-10-20T12:00:00.0 | 2025-10-01T13:00:00.0 | True | 2025-10-20T12:00:00.0 | 7876800 | 7876800 | 92 | True | 3 | 7876800 | 60 |  |  |  |  |  |  |  | 7876800 |
| 2025-10-01T13:00:00.0 | ed | Arch-Ext-Roof_Plantings | 3.1.6.1 | AS_SOON_AS_POSSIBLE |  | 500 | 316800 | 316800 | 2025-10-01T13:00:00.0 | 2025-10-16T12:00:00.0 | 2026-10-20T08:00:00.0 | 2026-11-03T17:00:00.0 | 93 |  | 2024-03-13T14:56:00.0 | 3.1.6.1 |  | PRORATED | True | True | 00000000-0000-0000-0000-000000000287 | True | PRORATED | 316800 | 2025-10-16T12:00:00.0 | 2025-10-01T13:00:00.0 | True | 2025-10-16T12:00:00.0 |  | 7876800 | 93 |  | 4 | 7876800 | 92 | 76 93 94 FS | Building > Roof | Architectural > Plants | Construct | Sets->Architectural->Exterior->Roof->Courtyard->Arch-Ext-Roof_Plantings | 2025-10-01T12:00:00.0 | 75 91 93 FS | 7876800 |
| 2025-10-16T13:00:00.0 | ed | Arch-Ext-Roof_ParkBenches | 3.1.6.2 | AS_SOON_AS_POSSIBLE |  | 500 | 57600 | 57600 | 2025-10-16T13:00:00.0 | 2025-10-20T12:00:00.0 | 2026-11-04T08:00:00.0 | 2026-11-05T17:00:00.0 | 94 |  | 2024-03-13T14:56:00.0 | 3.1.6.2 |  | PRORATED | True | True | 00000000-0000-0000-0000-000000000010 | True | PRORATED | 57600 | 2025-10-20T12:00:00.0 | 2025-10-16T13:00:00.0 | True | 2025-10-20T12:00:00.0 |  | 7876800 | 94 |  | 4 | 7876800 | 92 | 77 94 95 FS | Building > Roof | Architectural > Benches | Construct | Sets->Architectural->Exterior->Roof->Courtyard->Arch-Ext-Roof_ParkBenches | 2025-10-16T12:00:00.0 | 76 93 94 FS | 7876800 |
| 2025-10-20T13:00:00.0 | ed | Arch-Helipad | 3.1.7 | AS_SOON_AS_POSSIBLE |  | 500 | 201600 | 201600 | 2025-10-20T13:00:00.0 | 2025-10-29T12:00:00.0 | 2026-11-06T08:00:00.0 | 2026-11-16T17:00:00.0 | 95 |  | 2024-03-13T14:56:00.0 | 3.1.7 |  | PRORATED | True | True | 00000000-0000-0000-0000-000000000075 | True | PRORATED | 201600 | 2025-10-29T12:00:00.0 | 2025-10-20T13:00:00.0 | True | 2025-10-29T12:00:00.0 | 7876800 | 7876800 | 95 |  | 3 | 7876800 | 60 |  | Building > Roof | Architectural > Helipad | Construct | Sets->Architectural->Exterior->Roof->Arch-Helipad | 2025-10-20T12:00:00.0 | 77 94 95 FS | 7876800 |
| 2025-10-01T13:00:00.0 | ed | Interior | 3.2 | AS_SOON_AS_POSSIBLE | True | 500 | 5788800 | 5788800 | 2025-10-01T13:00:00.0 | 2026-07-09T12:00:00.0 | 2025-10-01T13:00:00.0 | 2026-11-16T17:00:00.0 | 96 | True | 2024-03-13T14:56:00.0 | 3.2 | FIXED_DURATION | PRORATED | True | True | 00000000-0000-0000-0000-000000000224 | True | PRORATED | 5788800 | 2026-07-09T12:00:00.0 | 2025-10-01T13:00:00.0 | True | 2026-07-09T12:00:00.0 |  |  | 96 | True | 2 | 2664000 | 59 |  |  |  |  |  |  |  |  |
| 2025-10-01T13:00:00.0 | ed | Arch-Int-Elevators | 3.2.1 | AS_SOON_AS_POSSIBLE |  | 500 | 1670400 | 1670400 | 2025-10-01T13:00:00.0 | 2025-12-22T12:00:00.0 | 2026-08-27T08:00:00.0 | 2026-11-16T17:00:00.0 | 97 |  | 2024-03-13T14:56:00.0 | 3.2.1 |  | PRORATED | True | True | 00000000-0000-0000-0000-000000000108 | True | PRORATED | 1670400 | 2025-12-22T12:00:00.0 | 2025-10-01T13:00:00.0 | True | 2025-12-22T12:00:00.0 | 6782400 | 6782400 | 97 |  | 3 | 6782400 | 96 |  | Building | Architectural > Elevator | Construct | Sets->Architectural->Interior->Arch-Int-Elevators | 2025-10-01T12:00:00.0 | 78 91 97 FS | 6782400 |
| 2025-10-01T13:00:00.0 | ed | Arch-Int-WaterFountain | 3.2.2 | AS_SOON_AS_POSSIBLE | True | 500 | 172800 | 172800 | 2025-10-01T13:00:00.0 | 2025-10-09T12:00:00.0 | 2025-10-01T13:00:00.0 | 2025-10-09T12:00:00.0 | 98 |  | 2024-03-13T14:56:00.0 | 3.2.2 |  | PRORATED | True | True | 00000000-0000-0000-0000-000000000285 | True | PRORATED | 172800 | 2025-10-09T12:00:00.0 | 2025-10-01T13:00:00.0 | True | 2025-10-09T12:00:00.0 |  |  | 98 |  | 3 |  | 96 | 80 98 99 FS | Building | Architectural > Water Fountain | Construct | Sets->Architectural->Interior->Arch-Int-WaterFountain | 2025-10-01T12:00:00.0 | 79 91 98 FS |  |
| 2025-10-09T13:00:00.0 | ed | Arch-Int-FixedWindows | 3.2.3 | AS_SOON_AS_POSSIBLE | True | 500 | 86400 | 86400 | 2025-10-09T13:00:00.0 | 2025-10-14T12:00:00.0 | 2025-10-09T13:00:00.0 | 2025-10-14T12:00:00.0 | 99 |  | 2024-03-13T14:56:00.0 | 3.2.3 |  | PRORATED | True | True | 00000000-0000-0000-0000-000000000198 | True | PRORATED | 86400 | 2025-10-14T12:00:00.0 | 2025-10-09T13:00:00.0 | True | 2025-10-14T12:00:00.0 |  |  | 99 |  | 3 |  | 96 | 81 99 100 FS | Building | Architectural > Fixed Windows | Construct | Sets->Architectural->Interior->Arch-Int-FixedWindows | 2025-10-09T12:00:00.0 | 80 98 99 FS |  |
| 2025-10-14T13:00:00.0 | ed | Arch-Int-Casework+Counters+InfoDesk | 3.2.4 | AS_SOON_AS_POSSIBLE | True | 500 | 230400 | 230400 | 2025-10-14T13:00:00.0 | 2025-10-24T12:00:00.0 | 2025-10-14T13:00:00.0 | 2025-10-24T12:00:00.0 | 100 |  | 2024-03-13T14:56:00.0 | 3.2.4 |  | PRORATED | True | True | 00000000-0000-0000-0000-000000000129 | True | PRORATED | 230400 | 2025-10-24T12:00:00.0 | 2025-10-14T13:00:00.0 | True | 2025-10-24T12:00:00.0 |  |  | 100 |  | 3 |  | 96 | 82 100 101 FS | Building | Architectural > Casework, Architectural > Counters, Architectural > Info Desk | Construct | Sets->Architectural->Interior->Arch-Int-Casework+Counters+InfoDesk | 2025-10-14T12:00:00.0 | 81 99 100 FS |  |
| 2025-10-24T13:00:00.0 | ed | Arch-Int-Stairs+Railings | 3.2.5 | AS_SOON_AS_POSSIBLE | True | 500 | 950400 | 950400 | 2025-10-24T13:00:00.0 | 2025-12-10T12:00:00.0 | 2025-10-24T13:00:00.0 | 2025-12-10T12:00:00.0 | 101 |  | 2024-03-13T14:56:00.0 | 3.2.5 |  | PRORATED | True | True | 00000000-0000-0000-0000-000000000199 | True | PRORATED | 950400 | 2025-12-10T12:00:00.0 | 2025-10-24T13:00:00.0 | True | 2025-12-10T12:00:00.0 |  |  | 101 |  | 3 |  | 96 | 83 101 102 FS | Building | Architectural > Stairs, Architectural > Railings | Construct | Sets->Architectural->Interior->Arch-Int-Stairs+Railings | 2025-10-24T12:00:00.0 | 82 100 101 FS |  |
| 2025-12-10T13:00:00.0 | ed | Arch-Int-Atrium Railings | 3.2.6 | AS_SOON_AS_POSSIBLE | True | 500 | 316800 | 316800 | 2025-12-10T13:00:00.0 | 2025-12-25T12:00:00.0 | 2025-12-10T13:00:00.0 | 2025-12-25T12:00:00.0 | 102 |  | 2024-03-13T14:56:00.0 | 3.2.6 |  | PRORATED | True | True | 00000000-0000-0000-0000-000000000184 | True | PRORATED | 316800 | 2025-12-25T12:00:00.0 | 2025-12-10T13:00:00.0 | True | 2025-12-25T12:00:00.0 |  |  | 102 |  | 3 |  | 96 | 84 102 104 FS | Building | Architectural > Atrium Railings | Construct | Sets->Architectural->Interior->Arch-Int-Atrium Railings | 2025-12-10T12:00:00.0 | 83 101 102 FS |  |
| 2025-12-25T13:00:00.0 | ed | Walls | 3.2.7 | AS_SOON_AS_POSSIBLE | True | 500 | 3744000 | 3744000 | 2025-12-25T13:00:00.0 | 2026-06-25T12:00:00.0 | 2025-12-25T13:00:00.0 | 2026-11-12T17:00:00.0 | 103 | True | 2024-03-13T14:56:00.0 | 3.2.7 | FIXED_DURATION | PRORATED | True | True | 00000000-0000-0000-0000-000000000243 | True | PRORATED | 3744000 | 2026-06-25T12:00:00.0 | 2025-12-25T13:00:00.0 | True | 2026-06-25T12:00:00.0 |  |  | 103 | True | 3 | 2894400 | 96 |  |  |  |  |  |  |  |  |
| 2025-12-25T13:00:00.0 | ed | Arch-Int-Wall-L1 | 3.2.7.1 | AS_SOON_AS_POSSIBLE | True | 500 | 604800 | 604800 | 2025-12-25T13:00:00.0 | 2026-01-23T12:00:00.0 | 2025-12-25T13:00:00.0 | 2026-01-23T12:00:00.0 | 104 |  | 2024-03-13T14:56:00.0 | 3.2.7.1 |  | PRORATED | True | True | 00000000-0000-0000-0000-000000000105 | True | PRORATED | 604800 | 2026-01-23T12:00:00.0 | 2025-12-25T13:00:00.0 | True | 2026-01-23T12:00:00.0 |  |  | 104 |  | 4 |  | 103 | 85 104 105 FS, 90 104 111 FS | Building > Level 1 | Architectural > Interior Wall | Construct | Sets->Architectural->Interior->Walls->Arch-Int-Wall-L1 | 2025-12-25T12:00:00.0 | 84 102 104 FS |  |
| 2026-01-23T13:00:00.0 | ed | Arch-Int-Wall-L2 | 3.2.7.2 | AS_SOON_AS_POSSIBLE | True | 500 | 633600 | 633600 | 2026-01-23T13:00:00.0 | 2026-02-24T12:00:00.0 | 2026-01-23T13:00:00.0 | 2026-02-24T12:00:00.0 | 105 |  | 2024-03-13T14:56:00.0 | 3.2.7.2 |  | PRORATED | True | True | 00000000-0000-0000-0000-000000000219 | True | PRORATED | 633600 | 2026-02-24T12:00:00.0 | 2026-01-23T13:00:00.0 | True | 2026-02-24T12:00:00.0 |  |  | 105 |  | 4 |  | 103 | 86 105 106 FS, 91 105 112 FS | Building > Level 2 | Architectural > Interior Wall | Construct | Sets->Architectural->Interior->Walls->Arch-Int-Wall-L2 | 2026-01-23T12:00:00.0 | 85 104 105 FS |  |
| 2026-02-24T13:00:00.0 | ed | Arch-Int-Wall-L3 | 3.2.7.3 | AS_SOON_AS_POSSIBLE | True | 500 | 633600 | 633600 | 2026-02-24T13:00:00.0 | 2026-03-26T12:00:00.0 | 2026-02-24T13:00:00.0 | 2026-03-26T12:00:00.0 | 106 |  | 2024-03-13T14:56:00.0 | 3.2.7.3 |  | PRORATED | True | True | 00000000-0000-0000-0000-000000000093 | True | PRORATED | 633600 | 2026-03-26T12:00:00.0 | 2026-02-24T13:00:00.0 | True | 2026-03-26T12:00:00.0 |  |  | 106 |  | 4 |  | 103 | 87 106 107 FS, 92 106 113 FS | Building > Level 3 | Architectural > Interior Wall | Construct | Sets->Architectural->Interior->Walls->Arch-Int-Wall-L3 | 2026-02-24T12:00:00.0 | 86 105 106 FS |  |
| 2026-03-26T13:00:00.0 | ed | Arch-Int-Wall-L4 | 3.2.7.4 | AS_SOON_AS_POSSIBLE | True | 500 | 633600 | 633600 | 2026-03-26T13:00:00.0 | 2026-04-27T12:00:00.0 | 2026-03-26T13:00:00.0 | 2026-04-27T12:00:00.0 | 107 |  | 2024-03-13T14:56:00.0 | 3.2.7.4 |  | PRORATED | True | True | 00000000-0000-0000-0000-000000000179 | True | PRORATED | 633600 | 2026-04-27T12:00:00.0 | 2026-03-26T13:00:00.0 | True | 2026-04-27T12:00:00.0 |  |  | 107 |  | 4 |  | 103 | 88 107 108 FS, 93 107 114 FS | Building > Level 4 | Architectural > Interior Wall | Construct | Sets->Architectural->Interior->Walls->Arch-Int-Wall-L4 | 2026-03-26T12:00:00.0 | 87 106 107 FS |  |
| 2026-04-27T13:00:00.0 | ed | Arch-Int-Wall-L5 | 3.2.7.5 | AS_SOON_AS_POSSIBLE | True | 500 | 604800 | 604800 | 2026-04-27T13:00:00.0 | 2026-05-26T12:00:00.0 | 2026-04-27T13:00:00.0 | 2026-05-26T12:00:00.0 | 108 |  | 2024-03-13T14:56:00.0 | 3.2.7.5 |  | PRORATED | True | True | 00000000-0000-0000-0000-000000000174 | True | PRORATED | 604800 | 2026-05-26T12:00:00.0 | 2026-04-27T13:00:00.0 | True | 2026-05-26T12:00:00.0 |  |  | 108 |  | 4 |  | 103 | 89 108 109 FS, 94 108 115 FS | Building > Level 5 | Architectural > Interior Wall | Construct | Sets->Architectural->Interior->Walls->Arch-Int-Wall-L5 | 2026-04-27T12:00:00.0 | 88 107 108 FS |  |
| 2026-05-26T13:00:00.0 | ed | Arch-Int-Wall-L6 | 3.2.7.6 | AS_SOON_AS_POSSIBLE |  | 500 | 633600 | 633600 | 2026-05-26T13:00:00.0 | 2026-06-25T12:00:00.0 | 2026-10-14T08:00:00.0 | 2026-11-12T17:00:00.0 | 109 |  | 2024-03-13T14:56:00.0 | 3.2.7.6 |  | PRORATED | True | True | 00000000-0000-0000-0000-000000000041 | True | PRORATED | 633600 | 2026-06-25T12:00:00.0 | 2026-05-26T13:00:00.0 | True | 2026-06-25T12:00:00.0 |  | 2894400 | 109 |  | 4 | 2894400 | 103 | 95 109 116 FS | Building > Level 6 | Architectural > Interior Wall | Construct | Sets->Architectural->Interior->Walls->Arch-Int-Wall-L6 | 2026-05-26T12:00:00.0 | 89 108 109 FS | 2894400 |
| 2026-01-23T13:00:00.0 | ed | Doors | 3.2.8 | AS_SOON_AS_POSSIBLE |  | 500 | 3196800 | 3196800 | 2026-01-23T13:00:00.0 | 2026-06-29T12:00:00.0 | 2026-05-26T13:00:00.0 | 2026-11-16T17:00:00.0 | 110 | True | 2024-03-13T14:56:00.0 | 3.2.8 | FIXED_DURATION | PRORATED | True | True | 00000000-0000-0000-0000-000000000025 | True | PRORATED | 3196800 | 2026-06-29T12:00:00.0 | 2026-01-23T13:00:00.0 | True | 2026-06-29T12:00:00.0 | 2505600 | 2505600 | 110 | True | 3 | 2894400 | 96 |  |  |  |  |  |  |  | 2505600 |
| 2026-01-23T13:00:00.0 | ed | Arch-Int-Doors-L1 | 3.2.8.1 | AS_SOON_AS_POSSIBLE |  | 500 | 489600 | 489600 | 2026-01-23T13:00:00.0 | 2026-02-17T12:00:00.0 | 2026-09-30T08:00:00.0 | 2026-10-22T17:00:00.0 | 111 |  | 2024-03-13T14:56:00.0 | 3.2.8.1 |  | PRORATED | True | True | 00000000-0000-0000-0000-000000000283 | True | PRORATED | 489600 | 2026-02-17T12:00:00.0 | 2026-01-23T13:00:00.0 | True | 2026-02-17T12:00:00.0 |  | 5112000 | 111 |  | 4 | 5112000 | 110 | 96 111 118 FS | Building > Level 1 | Architectural > Interior Doors | Construct | Sets->Architectural->Interior->Doors->Arch-Int-Doors-L1 | 2026-01-23T12:00:00.0 | 90 104 111 FS | 5112000 |
| 2026-02-24T13:00:00.0 | ed | Arch-Int-Doors-L2 | 3.2.8.2 | AS_SOON_AS_POSSIBLE |  | 500 | 432000 | 432000 | 2026-02-24T13:00:00.0 | 2026-03-17T12:00:00.0 | 2026-09-30T08:00:00.0 | 2026-10-20T17:00:00.0 | 112 |  | 2024-03-13T14:56:00.0 | 3.2.8.2 |  | PRORATED | True | True | 00000000-0000-0000-0000-000000000236 | True | PRORATED | 432000 | 2026-03-17T12:00:00.0 | 2026-02-24T13:00:00.0 | True | 2026-03-17T12:00:00.0 |  | 4478400 | 112 |  | 4 | 4478400 | 110 | 97 112 119 FS | Building > Level 2 | Architectural > Interior Doors | Construct | Sets->Architectural->Interior->Doors->Arch-Int-Doors-L2 | 2026-02-24T12:00:00.0 | 91 105 112 FS | 4478400 |
| 2026-03-26T13:00:00.0 | ed | Arch-Int-Doors-L3 | 3.2.8.3 | AS_SOON_AS_POSSIBLE |  | 500 | 460800 | 460800 | 2026-03-26T13:00:00.0 | 2026-04-17T12:00:00.0 | 2026-09-29T08:00:00.0 | 2026-10-20T17:00:00.0 | 113 |  | 2024-03-13T14:56:00.0 | 3.2.8.3 |  | PRORATED | True | True | 00000000-0000-0000-0000-000000000084 | True | PRORATED | 460800 | 2026-04-17T12:00:00.0 | 2026-03-26T13:00:00.0 | True | 2026-04-17T12:00:00.0 |  | 3816000 | 113 |  | 4 | 3816000 | 110 | 98 113 120 FS | Building > Level 3 | Architectural > Interior Doors | Construct | Sets->Architectural->Interior->Doors->Arch-Int-Doors-L3 | 2026-03-26T12:00:00.0 | 92 106 113 FS | 3816000 |
| 2026-04-27T13:00:00.0 | ed | Arch-Int-Doors-L4 | 3.2.8.4 | AS_SOON_AS_POSSIBLE |  | 500 | 432000 | 432000 | 2026-04-27T13:00:00.0 | 2026-05-18T12:00:00.0 | 2026-09-28T08:00:00.0 | 2026-10-16T17:00:00.0 | 114 |  | 2024-03-13T14:56:00.0 | 3.2.8.4 |  | PRORATED | True | True | 00000000-0000-0000-0000-000000000052 | True | PRORATED | 432000 | 2026-05-18T12:00:00.0 | 2026-04-27T13:00:00.0 | True | 2026-05-18T12:00:00.0 |  | 3153600 | 114 |  | 4 | 3153600 | 110 | 99 114 121 FS | Building > Level 4 | Architectural > Interior Doors | Construct | Sets->Architectural->Interior->Doors->Arch-Int-Doors-L4 | 2026-04-27T12:00:00.0 | 93 107 114 FS | 3153600 |
| 2026-05-26T13:00:00.0 | ed | Arch-Int-Doors-L5 | 3.2.8.5 | AS_SOON_AS_POSSIBLE | True | 500 | 403200 | 403200 | 2026-05-26T13:00:00.0 | 2026-06-15T12:00:00.0 | 2026-05-26T13:00:00.0 | 2026-06-15T12:00:00.0 | 115 |  | 2024-03-13T14:56:00.0 | 3.2.8.5 |  | PRORATED | True | True | 00000000-0000-0000-0000-000000000081 | True | PRORATED | 403200 | 2026-06-15T12:00:00.0 | 2026-05-26T13:00:00.0 | True | 2026-06-15T12:00:00.0 |  |  | 115 |  | 4 |  | 110 | 100 115 122 FS | Building > Level 5 | Architectural > Interior Doors | Construct | Sets->Architectural->Interior->Doors->Arch-Int-Doors-L5 | 2026-05-26T12:00:00.0 | 94 108 115 FS |  |
| 2026-06-25T13:00:00.0 | ed | Arch-Int-Doors-L6 | 3.2.8.6 | AS_SOON_AS_POSSIBLE |  | 500 | 57600 | 57600 | 2026-06-25T13:00:00.0 | 2026-06-29T12:00:00.0 | 2026-11-13T08:00:00.0 | 2026-11-16T17:00:00.0 | 116 |  | 2024-03-13T14:56:00.0 | 3.2.8.6 |  | PRORATED | True | True | 00000000-0000-0000-0000-000000000246 | True | PRORATED | 57600 | 2026-06-29T12:00:00.0 | 2026-06-25T13:00:00.0 | True | 2026-06-29T12:00:00.0 | 2894400 | 2894400 | 116 |  | 4 | 2894400 | 110 |  | Building > Level 6 | Architectural > Interior Doors | Construct | Sets->Architectural->Interior->Doors->Arch-Int-Doors-L6 | 2026-06-25T12:00:00.0 | 95 109 116 FS | 2894400 |
| 2026-02-17T13:00:00.0 | ed | Ceilings | 3.2.9 | AS_SOON_AS_POSSIBLE |  | 500 | 2736000 | 2736000 | 2026-02-17T13:00:00.0 | 2026-06-30T12:00:00.0 | 2026-06-15T13:00:00.0 | 2026-11-06T17:00:00.0 | 117 | True | 2024-03-13T14:56:00.0 | 3.2.9 | FIXED_DURATION | PRORATED | True | True | 00000000-0000-0000-0000-000000000268 | True | PRORATED | 2736000 | 2026-06-30T12:00:00.0 | 2026-02-17T13:00:00.0 | True | 2026-06-30T12:00:00.0 | 2419200 | 2419200 | 117 | True | 3 | 2692800 | 96 |  |  |  |  |  |  |  | 2419200 |
| 2026-02-17T13:00:00.0 | ed | Arch-Int-Ceiling-L1 | 3.2.9.1 | AS_SOON_AS_POSSIBLE |  | 500 | 316800 | 316800 | 2026-02-17T13:00:00.0 | 2026-03-04T12:00:00.0 | 2026-10-23T08:00:00.0 | 2026-11-06T17:00:00.0 | 118 |  | 2024-03-13T14:56:00.0 | 3.2.9.1 |  | PRORATED | True | True | 00000000-0000-0000-0000-000000000085 | True | PRORATED | 316800 | 2026-03-04T12:00:00.0 | 2026-02-17T13:00:00.0 | True | 2026-03-04T12:00:00.0 |  | 5112000 | 118 |  | 4 | 5112000 | 117 | 119 118 151 FS | Building > Level 1 | Architectural > Interior Ceiling | Construct | Sets->Architectural->Interior->Ceilings->Arch-Int-Ceiling-L1 | 2026-02-17T12:00:00.0 | 96 111 118 FS | 5112000 |
| 2026-03-17T13:00:00.0 | ed | Arch-Int-Ceiling-L2 | 3.2.9.2 | AS_SOON_AS_POSSIBLE |  | 500 | 316800 | 316800 | 2026-03-17T13:00:00.0 | 2026-04-01T12:00:00.0 | 2026-10-21T08:00:00.0 | 2026-11-04T17:00:00.0 | 119 |  | 2024-03-13T14:56:00.0 | 3.2.9.2 |  | PRORATED | True | True | 00000000-0000-0000-0000-000000000094 | True | PRORATED | 316800 | 2026-04-01T12:00:00.0 | 2026-03-17T13:00:00.0 | True | 2026-04-01T12:00:00.0 |  | 4478400 | 119 |  | 4 | 4478400 | 117 | 120 119 152 FS | Building > Level 2 | Architectural > Interior Ceiling | Construct | Sets->Architectural->Interior->Ceilings->Arch-Int-Ceiling-L2 | 2026-03-17T12:00:00.0 | 97 112 119 FS | 4478400 |
| 2026-04-17T13:00:00.0 | ed | Arch-Int-Ceiling-L3 | 3.2.9.3 | AS_SOON_AS_POSSIBLE |  | 500 | 316800 | 316800 | 2026-04-17T13:00:00.0 | 2026-05-04T12:00:00.0 | 2026-10-21T08:00:00.0 | 2026-11-04T17:00:00.0 | 120 |  | 2024-03-13T14:56:00.0 | 3.2.9.3 |  | PRORATED | True | True | 00000000-0000-0000-0000-000000000089 | True | PRORATED | 316800 | 2026-05-04T12:00:00.0 | 2026-04-17T13:00:00.0 | True | 2026-05-04T12:00:00.0 |  | 3816000 | 120 |  | 4 | 3816000 | 117 | 121 120 153 FS | Building > Level 3 | Architectural > Interior Ceiling | Construct | Sets->Architectural->Interior->Ceilings->Arch-Int-Ceiling-L3 | 2026-04-17T12:00:00.0 | 98 113 120 FS | 3816000 |
| 2026-05-18T13:00:00.0 | ed | Arch-Int-Ceiling-L4 | 3.2.9.4 | AS_SOON_AS_POSSIBLE |  | 500 | 316800 | 316800 | 2026-05-18T13:00:00.0 | 2026-06-02T12:00:00.0 | 2026-10-19T08:00:00.0 | 2026-11-02T17:00:00.0 | 121 |  | 2024-03-13T14:56:00.0 | 3.2.9.4 |  | PRORATED | True | True | 00000000-0000-0000-0000-000000000165 | True | PRORATED | 316800 | 2026-06-02T12:00:00.0 | 2026-05-18T13:00:00.0 | True | 2026-06-02T12:00:00.0 |  | 3153600 | 121 |  | 4 | 3153600 | 117 | 122 121 154 FS | Building > Level 4 | Architectural > Interior Ceiling | Construct | Sets->Architectural->Interior->Ceilings->Arch-Int-Ceiling-L4 | 2026-05-18T12:00:00.0 | 99 114 121 FS | 3153600 |
| 2026-06-15T13:00:00.0 | ed | Arch-Int-Ceiling-L5 | 3.2.9.5 | AS_SOON_AS_POSSIBLE | True | 500 | 316800 | 316800 | 2026-06-15T13:00:00.0 | 2026-06-30T12:00:00.0 | 2026-06-15T13:00:00.0 | 2026-06-30T12:00:00.0 | 122 |  | 2024-03-13T14:56:00.0 | 3.2.9.5 |  | PRORATED | True | True | 00000000-0000-0000-0000-000000000023 | True | PRORATED | 316800 | 2026-06-30T12:00:00.0 | 2026-06-15T13:00:00.0 | True | 2026-06-30T12:00:00.0 |  |  | 122 |  | 4 |  | 117 | 101 122 124 FS, 104 122 133 FS, 110 122 140 FS, 123 122 155 FS | Building > Level 5 | Architectural > Interior Ceiling | Construct | Sets->Architectural->Interior->Ceilings->Arch-Int-Ceiling-L5 | 2026-06-15T12:00:00.0 | 100 115 122 FS |  |
| 2026-06-30T13:00:00.0 | ed | Plumbing Fixtures | 3.2.10 | AS_SOON_AS_POSSIBLE |  | 500 | 144000 | 144000 | 2026-06-30T13:00:00.0 | 2026-07-07T12:00:00.0 | 2026-11-06T08:00:00.0 | 2026-11-12T17:00:00.0 | 123 | True | 2024-03-13T14:56:00.0 | 3.2.10 | FIXED_DURATION | PRORATED | True | True | 00000000-0000-0000-0000-000000000187 | True | PRORATED | 144000 | 2026-07-07T12:00:00.0 | 2026-06-30T13:00:00.0 | True | 2026-07-07T12:00:00.0 | 2664000 | 2664000 | 123 | True | 3 | 2664000 | 96 |  |  |  |  |  |  |  | 2664000 |
| 2026-06-30T13:00:00.0 | ed | Arch-Int-GrabBar+Stalls-All Levels | 3.2.10.1 | AS_SOON_AS_POSSIBLE |  | 500 | 144000 | 144000 | 2026-06-30T13:00:00.0 | 2026-07-07T12:00:00.0 | 2026-11-06T08:00:00.0 | 2026-11-12T17:00:00.0 | 124 |  | 2024-03-13T14:56:00.0 | 3.2.10.1 |  | PRORATED | True | True | 00000000-0000-0000-0000-000000000074 | True | PRORATED | 144000 | 2026-07-07T12:00:00.0 | 2026-06-30T13:00:00.0 | True | 2026-07-07T12:00:00.0 |  | 2664000 | 124 |  | 4 | 2664000 | 123 | 102 124 126 FS | Building | Architectural > Grab Bars, Architectural > Stalls | Construct | Sets->Architectural->Interior->Plumbing->Arch-Int-GrabBar+Stalls-All Levels | 2026-06-30T12:00:00.0 | 101 122 124 FS | 2664000 |
| 2026-07-07T13:00:00.0 | ed | Furniture | 3.2.11 | AS_SOON_AS_POSSIBLE |  | 500 | 57600 | 57600 | 2026-07-07T13:00:00.0 | 2026-07-09T12:00:00.0 | 2026-11-13T08:00:00.0 | 2026-11-16T17:00:00.0 | 125 | True | 2024-03-13T14:56:00.0 | 3.2.11 | FIXED_DURATION | PRORATED | True | True | 00000000-0000-0000-0000-000000000138 | True | PRORATED | 57600 | 2026-07-09T12:00:00.0 | 2026-07-07T13:00:00.0 | True | 2026-07-09T12:00:00.0 | 2664000 | 2664000 | 125 | True | 3 | 2664000 | 96 |  |  |  |  |  |  |  | 2664000 |
| 2026-07-07T13:00:00.0 | ed | Arch-Int-Dining_Tables+Chairs | 3.2.11.1 | AS_SOON_AS_POSSIBLE |  | 500 | 28800 | 28800 | 2026-07-07T13:00:00.0 | 2026-07-08T12:00:00.0 | 2026-11-13T08:00:00.0 | 2026-11-13T17:00:00.0 | 126 |  | 2024-03-13T14:56:00.0 | 3.2.11.1 |  | PRORATED | True | True | 00000000-0000-0000-0000-000000000286 | True | PRORATED | 28800 | 2026-07-08T12:00:00.0 | 2026-07-07T13:00:00.0 | True | 2026-07-08T12:00:00.0 |  | 2664000 | 126 |  | 4 | 2664000 | 125 | 103 126 127 FS | Building > Dining | Architectural > Tables, Architectural > Chairs | Construct | Sets->Architectural->Interior->Furniture->Arch-Int-Dining_Tables+Chairs | 2026-07-07T12:00:00.0 | 102 124 126 FS | 2664000 |
| 2026-07-08T13:00:00.0 | ed | Arch-Int-LectureRm_Tables+Chairs | 3.2.11.2 | AS_SOON_AS_POSSIBLE |  | 500 | 28800 | 28800 | 2026-07-08T13:00:00.0 | 2026-07-09T12:00:00.0 | 2026-11-16T08:00:00.0 | 2026-11-16T17:00:00.0 | 127 |  | 2024-03-13T14:56:00.0 | 3.2.11.2 |  | PRORATED | True | True | 00000000-0000-0000-0000-000000000311 | True | PRORATED | 28800 | 2026-07-09T12:00:00.0 | 2026-07-08T13:00:00.0 | True | 2026-07-09T12:00:00.0 | 2664000 | 2664000 | 127 |  | 4 | 2664000 | 125 |  | Building > Lecture Room | Architectural > Tables, Architectural > Chairs | Construct | Sets->Architectural->Interior->Furniture->Arch-Int-LectureRm_Tables+Chairs | 2026-07-08T12:00:00.0 | 103 126 127 FS | 2664000 |
| 2026-09-14T13:00:00.0 | ed | Arch-Solar Panels | 3.3 | AS_SOON_AS_POSSIBLE | True | 500 | 633600 | 633600 | 2026-09-14T13:00:00.0 | 2026-10-14T12:00:00.0 | 2026-09-14T13:00:00.0 | 2026-10-14T12:00:00.0 | 128 |  | 2024-03-13T14:56:00.0 | 3.3 |  | PRORATED | True | True | 00000000-0000-0000-0000-000000000100 | True | PRORATED | 633600 | 2026-10-14T12:00:00.0 | 2026-09-14T13:00:00.0 | True | 2026-10-14T12:00:00.0 |  |  | 128 |  | 2 |  | 59 | 139 128 129 FS | Building > Roof | Architectural > Solar Panels | Construct | Sets->Architectural->Arch-Solar Panels | 2026-09-14T12:00:00.0 | 138 173 128 FS |  |
| 2026-10-14T13:00:00.0 | ed | Arch-Wind Turbines | 3.4 | AS_SOON_AS_POSSIBLE | True | 500 | 633600 | 633600 | 2026-10-14T13:00:00.0 | 2026-11-13T12:00:00.0 | 2026-10-14T13:00:00.0 | 2026-11-13T12:00:00.0 | 129 |  | 2024-03-13T14:56:00.0 | 3.4 |  | PRORATED | True | True | 00000000-0000-0000-0000-000000000272 | True | PRORATED | 633600 | 2026-11-13T12:00:00.0 | 2026-10-14T13:00:00.0 | True | 2026-11-13T12:00:00.0 |  |  | 129 |  | 2 |  | 59 | 140 129 130 FS | Building > Roof | Architectural > Wind Turbines | Construct | Sets->Architectural->Arch-Wind Turbines | 2026-10-14T12:00:00.0 | 139 128 129 FS |  |
| 2026-11-13T13:00:00.0 | ed | Life_Flight_Helicopter | 3.5 | AS_SOON_AS_POSSIBLE | True | 500 | 14400 | 14400 | 2026-11-13T13:00:00.0 | 2026-11-13T17:00:00.0 | 2026-11-13T13:00:00.0 | 2026-11-13T17:00:00.0 | 130 |  | 2024-03-13T14:56:00.0 | 3.5 |  | PRORATED | True | True | 00000000-0000-0000-0000-000000000101 | True | PRORATED | 14400 | 2026-11-13T17:00:00.0 | 2026-11-13T13:00:00.0 | True | 2026-11-13T17:00:00.0 |  |  | 130 |  | 2 |  | 59 | 141 130 131 FS | Building > Roof | Architectural > Helicopter | Construct | Sets->Architectural->Life_Flight_Helicopter | 2026-11-13T12:00:00.0 | 140 129 130 FS |  |
| 2026-11-16T08:00:00.0 | ed | Semi Trucks | 3.6 | AS_SOON_AS_POSSIBLE | True | 500 | 28800 | 28800 | 2026-11-16T08:00:00.0 | 2026-11-16T17:00:00.0 | 2026-11-16T08:00:00.0 | 2026-11-16T17:00:00.0 | 131 |  | 2024-03-13T14:56:00.0 | 3.6 |  | PRORATED | True | True | 00000000-0000-0000-0000-000000000289 | True | PRORATED | 28800 | 2026-11-16T17:00:00.0 | 2026-11-16T08:00:00.0 | True | 2026-11-16T17:00:00.0 |  |  | 131 |  | 2 |  | 59 |  | Site | Equipment > Semi Truck | Construct | Sets->Architectural->Semi Trucks | 2026-11-13T17:00:00.0 | 141 130 131 FS |  |
| 2026-06-30T13:00:00.0 | ed | Electrical | 4 | AS_SOON_AS_POSSIBLE |  | 500 | 1065600 | 1065600 | 2026-06-30T13:00:00.0 | 2026-08-20T12:00:00.0 | 2026-09-25T08:00:00.0 | 2026-11-16T17:00:00.0 | 132 | True | 2024-03-13T14:56:00.0 | 4 | FIXED_DURATION | PRORATED | True | True | 00000000-0000-0000-0000-000000000223 | True | PRORATED | 1065600 | 2026-08-20T12:00:00.0 | 2026-06-30T13:00:00.0 | True | 2026-08-20T12:00:00.0 | 1800000 | 1800000 | 132 | True | 1 | 1800000 | 0 |  |  |  |  |  |  |  | 1800000 |
| 2026-06-30T13:00:00.0 | ed | Elect-Equip,Tray,Conduit | 4.1 | AS_SOON_AS_POSSIBLE |  | 500 | 86400 | 86400 | 2026-06-30T13:00:00.0 | 2026-07-03T12:00:00.0 | 2026-09-25T08:00:00.0 | 2026-09-29T17:00:00.0 | 133 |  | 2024-03-13T14:56:00.0 | 4.1 |  | PRORATED | True | True | 00000000-0000-0000-0000-000000000012 | True | PRORATED | 86400 | 2026-07-03T12:00:00.0 | 2026-06-30T13:00:00.0 | True | 2026-07-03T12:00:00.0 |  | 1800000 | 133 |  | 2 | 1800000 | 132 | 105 133 134 FS | Building | Electrical > Tray, Electrical > Conduit | Construct | Sets->Electrical->Elect-Equip,Tray,Conduit | 2026-06-30T12:00:00.0 | 104 122 133 FS | 1800000 |
| 2026-07-03T13:00:00.0 | ed | Elect-Motors | 4.2 | AS_SOON_AS_POSSIBLE |  | 500 | 57600 | 57600 | 2026-07-03T13:00:00.0 | 2026-07-07T12:00:00.0 | 2026-09-30T08:00:00.0 | 2026-10-01T17:00:00.0 | 134 |  | 2024-03-13T14:56:00.0 | 4.2 |  | PRORATED | True | True | 00000000-0000-0000-0000-000000000271 | True | PRORATED | 57600 | 2026-07-07T12:00:00.0 | 2026-07-03T13:00:00.0 | True | 2026-07-07T12:00:00.0 |  | 1800000 | 134 |  | 2 | 1800000 | 132 | 106 134 135 FS | Building | Electrical > Motors | Construct | Sets->Electrical->Elect-Motors | 2026-07-03T12:00:00.0 | 105 133 134 FS | 1800000 |
| 2026-07-07T13:00:00.0 | ed | Elect-Receptacles-All | 4.3 | AS_SOON_AS_POSSIBLE |  | 500 | 172800 | 172800 | 2026-07-07T13:00:00.0 | 2026-07-15T12:00:00.0 | 2026-10-02T08:00:00.0 | 2026-10-09T17:00:00.0 | 135 |  | 2024-03-13T14:56:00.0 | 4.3 |  | PRORATED | True | True | 00000000-0000-0000-0000-000000000203 | True | PRORATED | 172800 | 2026-07-15T12:00:00.0 | 2026-07-07T13:00:00.0 | True | 2026-07-15T12:00:00.0 |  | 1800000 | 135 |  | 2 | 1800000 | 132 | 107 135 136 FS | Building | Electrical > Receptacles | Construct | Sets->Electrical->Elect-Receptacles | 2026-07-07T12:00:00.0 | 106 134 135 FS | 1800000 |
| 2026-07-15T13:00:00.0 | ed | Elect-LightFixtures-All | 4.4 | AS_SOON_AS_POSSIBLE |  | 500 | 288000 | 288000 | 2026-07-15T13:00:00.0 | 2026-07-29T12:00:00.0 | 2026-10-12T08:00:00.0 | 2026-10-23T17:00:00.0 | 136 |  | 2024-03-13T14:56:00.0 | 4.4 |  | PRORATED | True | True | 00000000-0000-0000-0000-000000000185 | True | PRORATED | 288000 | 2026-07-29T12:00:00.0 | 2026-07-15T13:00:00.0 | True | 2026-07-29T12:00:00.0 |  | 1800000 | 136 |  | 2 | 1800000 | 132 | 108 136 137 FS | Building | Electrical > Light Fixtures | Construct | Sets->Electrical->Elect-LightFixtures | 2026-07-15T12:00:00.0 | 107 135 136 FS | 1800000 |
| 2026-07-29T13:00:00.0 | ed | Elect-NurseCallDevices | 4.5 | AS_SOON_AS_POSSIBLE |  | 500 | 230400 | 230400 | 2026-07-29T13:00:00.0 | 2026-08-10T12:00:00.0 | 2026-10-26T08:00:00.0 | 2026-11-04T17:00:00.0 | 137 |  | 2024-03-13T14:56:00.0 | 4.5 |  | PRORATED | True | True | 00000000-0000-0000-0000-000000000210 | True | PRORATED | 230400 | 2026-08-10T12:00:00.0 | 2026-07-29T13:00:00.0 | True | 2026-08-10T12:00:00.0 |  | 1800000 | 137 |  | 2 | 1800000 | 132 | 109 137 138 FS | Building | Electrical > Nurse Call | Construct | Sets->Electrical->Elect-NurseCallDevices | 2026-07-29T12:00:00.0 | 108 136 137 FS | 1800000 |
| 2026-08-10T13:00:00.0 | ed | Elect-DataOutlet | 4.6 | AS_SOON_AS_POSSIBLE |  | 500 | 230400 | 230400 | 2026-08-10T13:00:00.0 | 2026-08-20T12:00:00.0 | 2026-11-05T08:00:00.0 | 2026-11-16T17:00:00.0 | 138 |  | 2024-03-13T14:56:00.0 | 4.6 |  | PRORATED | True | True | 00000000-0000-0000-0000-000000000290 | True | PRORATED | 230400 | 2026-08-20T12:00:00.0 | 2026-08-10T13:00:00.0 | True | 2026-08-20T12:00:00.0 | 1800000 | 1800000 | 138 |  | 2 | 1800000 | 132 |  | Building | Electrical > Data Outlets | Construct | Sets->Electrical->Elect-DataOutlet | 2026-08-10T12:00:00.0 | 109 137 138 FS | 1800000 |
| 2026-06-30T13:00:00.0 | ed | HVAC | 5 | AS_SOON_AS_POSSIBLE |  | 500 | 1843200 | 1843200 | 2026-06-30T13:00:00.0 | 2026-09-28T12:00:00.0 | 2026-08-19T08:00:00.0 | 2026-11-16T17:00:00.0 | 139 | True | 2024-03-13T14:56:00.0 | 5 | FIXED_DURATION | PRORATED | True | True | 00000000-0000-0000-0000-000000000228 | True | PRORATED | 1843200 | 2026-09-28T12:00:00.0 | 2026-06-30T13:00:00.0 | True | 2026-09-28T12:00:00.0 | 1022400 | 1022400 | 139 | True | 1 | 1022400 | 0 |  |  |  |  |  |  |  | 1022400 |

| start | leveling_delay_units | name | wbs | constraint_type | critical | priority | duration | remaining_duration | early_start | early_finish | late_start | late_finish | unique_id | summary | created | outline_number | type | fixed_cost_accrual | leveling_can_split | level_assignments | guid | active | baseline_fixed_cost_accrual | scheduled_duration | scheduled_finish | scheduled_start | recalc_outline_codes | finish | free_slack | total_slack | id | rollup | outline_level | finish_slack | parent_task_unique_id | successors | text2 | text3 | text4 | text5 | summary_progress | predecessors | start_slack |
| --- | --- | --- | --- | --- | --- | --- | --- | --- | --- | --- | --- | --- | --- | --- | --- | --- | --- | --- | --- | --- | --- | --- | --- | --- | --- | --- | --- | --- | --- | --- | --- | --- | --- | --- | --- | --- | --- | --- | --- | --- | --- | --- | --- |
| 2026-06-30T13:00:00.0 | ed | HVAC-Rooftop-Equip | 5.1 | AS_SOON_AS_POSSIBLE |  | 500 | 57600 | 57600 | 2026-06-30T13:00:00.0 | 2026-07-02T12:00:00.0 | 2026-08-19T08:00:00.0 | 2026-08-20T17:00:00.0 | 140 |  | 2024-03-13T14:56:00.0 | 5.1 |  | PRORATED | True | True | 00000000-0000-0000-0000-000000000068 | True | PRORATED | 57600 | 2026-07-02T12:00:00.0 | 2026-06-30T13:00:00.0 | True | 2026-07-02T12:00:00.0 |  | 1022400 | 140 |  | 2 | 1022400 | 139 | 111 140 141 FS, 118 140 148 FS | Building > Roof | HVAC > Equipment | Construct | Sets->HVAC->HVAC-Rooftop-Equip | 2026-06-30T12:00:00.0 | 110 122 140 FS | 1022400 |
| 2026-07-02T13:00:00.0 | ed | HVAC-Rooftop-Ducts+Pipes | 5.2 | AS_SOON_AS_POSSIBLE |  | 500 | 115200 | 115200 | 2026-07-02T13:00:00.0 | 2026-07-08T12:00:00.0 | 2026-08-21T08:00:00.0 | 2026-08-26T17:00:00.0 | 141 |  | 2024-03-13T14:56:00.0 | 5.2 |  | PRORATED | True | True | 00000000-0000-0000-0000-000000000037 | True | PRORATED | 115200 | 2026-07-08T12:00:00.0 | 2026-07-02T13:00:00.0 | True | 2026-07-08T12:00:00.0 |  | 1022400 | 141 |  | 2 | 1022400 | 139 | 112 141 142 FS | Building > Roof | HVAC > Duct, HVAC > Pipes | Construct | Sets->HVAC->HVAC-Rooftop-Ducts+Pipes | 2026-07-02T12:00:00.0 | 111 140 141 FS | 1022400 |
| 2026-07-08T13:00:00.0 | ed | HVAC-Ducts-L5 | 5.3 | AS_SOON_AS_POSSIBLE |  | 500 | 288000 | 288000 | 2026-07-08T13:00:00.0 | 2026-07-22T12:00:00.0 | 2026-08-27T08:00:00.0 | 2026-09-09T17:00:00.0 | 142 |  | 2024-03-13T14:56:00.0 | 5.3 |  | PRORATED | True | True | 00000000-0000-0000-0000-000000000181 | True | PRORATED | 288000 | 2026-07-22T12:00:00.0 | 2026-07-08T13:00:00.0 | True | 2026-07-22T12:00:00.0 |  | 1022400 | 142 |  | 2 | 1022400 | 139 | 113 142 143 FS | Building > Level 5 | HVAC > Duct | Construct | Sets->HVAC->HVAC-Ducts-L5 | 2026-07-08T12:00:00.0 | 112 141 142 FS | 1022400 |
| 2026-07-22T13:00:00.0 | ed | HVAC-Ducts-L4 | 5.4 | AS_SOON_AS_POSSIBLE |  | 500 | 230400 | 230400 | 2026-07-22T13:00:00.0 | 2026-08-03T12:00:00.0 | 2026-09-10T08:00:00.0 | 2026-09-21T17:00:00.0 | 143 |  | 2024-03-13T14:56:00.0 | 5.4 |  | PRORATED | True | True | 00000000-0000-0000-0000-000000000026 | True | PRORATED | 230400 | 2026-08-03T12:00:00.0 | 2026-07-22T13:00:00.0 | True | 2026-08-03T12:00:00.0 |  | 1022400 | 143 |  | 2 | 1022400 | 139 | 114 143 144 FS | Building > Level 4 | HVAC > Duct | Construct | Sets->HVAC->HVAC-Ducts-L4 | 2026-07-22T12:00:00.0 | 113 142 143 FS | 1022400 |
| 2026-08-03T13:00:00.0 | ed | HVAC-Ducts-L3 | 5.5 | AS_SOON_AS_POSSIBLE |  | 500 | 230400 | 230400 | 2026-08-03T13:00:00.0 | 2026-08-13T12:00:00.0 | 2026-09-22T08:00:00.0 | 2026-10-01T17:00:00.0 | 144 |  | 2024-03-13T14:56:00.0 | 5.5 |  | PRORATED | True | True | 00000000-0000-0000-0000-000000000151 | True | PRORATED | 230400 | 2026-08-13T12:00:00.0 | 2026-08-03T13:00:00.0 | True | 2026-08-13T12:00:00.0 |  | 1022400 | 144 |  | 2 | 1022400 | 139 | 115 144 145 FS | Building > Level 3 | HVAC > Duct | Construct | Sets->HVAC->HVAC-Ducts-L3 | 2026-08-03T12:00:00.0 | 114 143 144 FS | 1022400 |
| 2026-08-13T13:00:00.0 | ed | HVAC-Ducts-L2 | 5.6 | AS_SOON_AS_POSSIBLE |  | 500 | 403200 | 403200 | 2026-08-13T13:00:00.0 | 2026-09-02T12:00:00.0 | 2026-10-02T08:00:00.0 | 2026-10-21T17:00:00.0 | 145 |  | 2024-03-13T14:56:00.0 | 5.6 |  | PRORATED | True | True | 00000000-0000-0000-0000-000000000011 | True | PRORATED | 403200 | 2026-09-02T12:00:00.0 | 2026-08-13T13:00:00.0 | True | 2026-09-02T12:00:00.0 |  | 1022400 | 145 |  | 2 | 1022400 | 139 | 116 145 146 FS | Building > Level 2 | HVAC > Duct | Construct | Sets->HVAC->HVAC-Ducts-L2 | 2026-08-13T12:00:00.0 | 115 144 145 FS | 1022400 |
| 2026-09-02T13:00:00.0 | ed | HVAC-Ducts-L1 | 5.7 | AS_SOON_AS_POSSIBLE |  | 500 | 345600 | 345600 | 2026-09-02T13:00:00.0 | 2026-09-18T12:00:00.0 | 2026-10-22T08:00:00.0 | 2026-11-06T17:00:00.0 | 146 |  | 2024-03-13T14:56:00.0 | 5.7 |  | PRORATED | True | True | 00000000-0000-0000-0000-000000000098 | True | PRORATED | 345600 | 2026-09-18T12:00:00.0 | 2026-09-02T13:00:00.0 | True | 2026-09-18T12:00:00.0 |  | 1022400 | 146 |  | 2 | 1022400 | 139 | 117 146 147 FS | Building > Level 1 | HVAC > Duct | Construct | Sets->HVAC->HVAC-Ducts-L1 | 2026-09-02T12:00:00.0 | 116 145 146 FS | 1022400 |
| 2026-09-18T13:00:00.0 | ed | HVAC-Diffusers | 5.8 | AS_SOON_AS_POSSIBLE |  | 500 | 172800 | 172800 | 2026-09-18T13:00:00.0 | 2026-09-28T12:00:00.0 | 2026-11-09T08:00:00.0 | 2026-11-16T17:00:00.0 | 147 |  | 2024-03-13T14:56:00.0 | 5.8 |  | PRORATED | True | True | 00000000-0000-0000-0000-000000000274 | True | PRORATED | 172800 | 2026-09-28T12:00:00.0 | 2026-09-18T13:00:00.0 | True | 2026-09-28T12:00:00.0 | 1022400 | 1022400 | 147 |  | 2 | 1022400 | 139 |  | Building | HVAC > Diffusers | Construct | Sets->HVAC->HVAC-Diffusers | 2026-09-18T12:00:00.0 | 117 146 147 FS | 1022400 |
| 2026-07-02T13:00:00.0 | ed | Mech-Pipes_MedGasOutlet-L1-L5 | 5.9 | AS_SOON_AS_POSSIBLE |  | 500 | 230400 | 230400 | 2026-07-02T13:00:00.0 | 2026-07-14T12:00:00.0 | 2026-11-05T08:00:00.0 | 2026-11-16T17:00:00.0 | 148 |  | 2024-03-13T14:56:00.0 | 5.9 |  | PRORATED | True | True | 00000000-0000-0000-0000-000000000254 | True | PRORATED | 230400 | 2026-07-14T12:00:00.0 | 2026-07-02T13:00:00.0 | True | 2026-07-14T12:00:00.0 | 2577600 | 2577600 | 148 |  | 2 | 2577600 | 139 |  | Building | HVAC > Pipes, HVAC > Med Gas Outlets | Construct | Sets->HVAC->HVAC-Pipes_MedGasOutlet-L1-L5 | 2026-07-02T12:00:00.0 | 118 140 148 FS | 2577600 |
| 2026-03-04T13:00:00.0 | ed | Plumbing | 6 | AS_SOON_AS_POSSIBLE |  | 500 | 3052800 | 3052800 | 2026-03-04T13:00:00.0 | 2026-07-30T12:00:00.0 | 2026-06-30T13:00:00.0 | 2026-11-16T17:00:00.0 | 149 | True | 2024-03-13T14:56:00.0 | 6 | FIXED_DURATION | PRORATED | True | True | 00000000-0000-0000-0000-000000000110 | True | PRORATED | 3052800 | 2026-07-30T12:00:00.0 | 2026-03-04T13:00:00.0 | True | 2026-07-30T12:00:00.0 | 2232000 | 2232000 | 149 | True | 1 | 2232000 | 0 |  |  |  |  |  |  |  | 2419200 |
| 2026-03-04T13:00:00.0 | ed | Piping and Fittings | 6.1 | AS_SOON_AS_POSSIBLE |  | 500 | 2620800 | 2620800 | 2026-03-04T13:00:00.0 | 2026-07-09T12:00:00.0 | 2026-06-30T13:00:00.0 | 2026-11-16T17:00:00.0 | 150 | True | 2024-03-13T14:56:00.0 | 6.1 | FIXED_DURATION | PRORATED | True | True | 00000000-0000-0000-0000-000000000156 | True | PRORATED | 2620800 | 2026-07-09T12:00:00.0 | 2026-03-04T13:00:00.0 | True | 2026-07-09T12:00:00.0 | 2419200 | 2419200 | 150 | True | 2 | 2664000 | 149 |  |  |  |  |  |  |  | 2419200 |
| 2026-03-04T13:00:00.0 | ed | Plumb-Pipe+Fittings-L1 | 6.1.1 | AS_SOON_AS_POSSIBLE |  | 500 | 172800 | 172800 | 2026-03-04T13:00:00.0 | 2026-03-12T12:00:00.0 | 2026-11-09T08:00:00.0 | 2026-11-16T17:00:00.0 | 151 |  | 2024-03-13T14:56:00.0 | 6.1.1 |  | PRORATED | True | True | 00000000-0000-0000-0000-000000000119 | True | PRORATED | 172800 | 2026-03-12T12:00:00.0 | 2026-03-04T13:00:00.0 | True | 2026-03-12T12:00:00.0 | 5112000 | 5112000 | 151 |  | 3 | 5112000 | 150 |  | Building > Level 1 | Plumbing > Pipe | Construct | Sets->Plumbing->Piping and Fittings->Plumb-Pipe+Fittings-L1 | 2026-03-04T12:00:00.0 | 119 118 151 FS | 5112000 |
| 2026-04-01T13:00:00.0 | ed | Plumb-Pipe+Fittings-L2 | 6.1.2 | AS_SOON_AS_POSSIBLE |  | 500 | 230400 | 230400 | 2026-04-01T13:00:00.0 | 2026-04-13T12:00:00.0 | 2026-11-05T08:00:00.0 | 2026-11-16T17:00:00.0 | 152 |  | 2024-03-13T14:56:00.0 | 6.1.2 |  | PRORATED | True | True | 00000000-0000-0000-0000-000000000066 | True | PRORATED | 230400 | 2026-04-13T12:00:00.0 | 2026-04-01T13:00:00.0 | True | 2026-04-13T12:00:00.0 | 4478400 | 4478400 | 152 |  | 3 | 4478400 | 150 |  | Building > Level 2 | Plumbing > Pipe | Construct | Sets->Plumbing->Piping and Fittings->Plumb-Pipe+Fittings-L2 | 2026-04-01T12:00:00.0 | 120 119 152 FS | 4478400 |
| 2026-05-04T13:00:00.0 | ed | Plumb-Pipe+Fittings-L3 | 6.1.3 | AS_SOON_AS_POSSIBLE |  | 500 | 230400 | 230400 | 2026-05-04T13:00:00.0 | 2026-05-14T12:00:00.0 | 2026-11-05T08:00:00.0 | 2026-11-16T17:00:00.0 | 153 |  | 2024-03-13T14:56:00.0 | 6.1.3 |  | PRORATED | True | True | 00000000-0000-0000-0000-000000000107 | True | PRORATED | 230400 | 2026-05-14T12:00:00.0 | 2026-05-04T13:00:00.0 | True | 2026-05-14T12:00:00.0 | 3816000 | 3816000 | 153 |  | 3 | 3816000 | 150 |  | Building > Level 3 | Plumbing > Pipe | Construct | Sets->Plumbing->Piping and Fittings->Plumb-Pipe+Fittings-L3 | 2026-05-04T12:00:00.0 | 121 120 153 FS | 3816000 |
| 2026-06-02T13:00:00.0 | ed | Plumb-Pipe+Fittings-L4 | 6.1.4 | AS_SOON_AS_POSSIBLE |  | 500 | 288000 | 288000 | 2026-06-02T13:00:00.0 | 2026-06-16T12:00:00.0 | 2026-11-03T08:00:00.0 | 2026-11-16T17:00:00.0 | 154 |  | 2024-03-13T14:56:00.0 | 6.1.4 |  | PRORATED | True | True | 00000000-0000-0000-0000-000000000175 | True | PRORATED | 288000 | 2026-06-16T12:00:00.0 | 2026-06-02T13:00:00.0 | True | 2026-06-16T12:00:00.0 | 3153600 | 3153600 | 154 |  | 3 | 3153600 | 150 |  | Building > Level 4 | Plumbing > Pipe | Construct | Sets->Plumbing->Piping and Fittings->Plumb-Pipe+Fittings-L4 | 2026-06-02T12:00:00.0 | 122 121 154 FS | 3153600 |
| 2026-06-30T13:00:00.0 | ed | Plumb-Pipe+Fittings-L5 | 6.1.5 | AS_SOON_AS_POSSIBLE | True | 500 | 201600 | 201600 | 2026-06-30T13:00:00.0 | 2026-07-09T12:00:00.0 | 2026-06-30T13:00:00.0 | 2026-07-09T12:00:00.0 | 155 |  | 2024-03-13T14:56:00.0 | 6.1.5 |  | PRORATED | True | True | 00000000-0000-0000-0000-000000000266 | True | PRORATED | 201600 | 2026-07-09T12:00:00.0 | 2026-06-30T13:00:00.0 | True | 2026-07-09T12:00:00.0 |  |  | 155 |  | 3 |  | 150 | 124 155 157 FS | Building > Level 5 | Plumbing > Pipe | Construct | Sets->Plumbing->Piping and Fittings->Plumb-Pipe+Fittings-L5 | 2026-06-30T12:00:00.0 | 123 122 155 FS |  |
| 2026-07-09T13:00:00.0 | ed | Fixtures | 6.2 | AS_SOON_AS_POSSIBLE | True | 500 | 432000 | 432000 | 2026-07-09T13:00:00.0 | 2026-07-30T12:00:00.0 | 2026-07-09T13:00:00.0 | 2026-07-30T12:00:00.0 | 156 | True | 2024-03-13T14:56:00.0 | 6.2 | FIXED_DURATION | PRORATED | True | True | 00000000-0000-0000-0000-000000000308 | True | PRORATED | 432000 | 2026-07-30T12:00:00.0 | 2026-07-09T13:00:00.0 | True | 2026-07-30T12:00:00.0 |  |  | 156 | True | 2 |  | 149 |  |  |  |  |  |  |  |  |
| 2026-07-09T13:00:00.0 | ed | Plumb-Fixtures-L1 | 6.2.1 | AS_SOON_AS_POSSIBLE | True | 500 | 28800 | 28800 | 2026-07-09T13:00:00.0 | 2026-07-10T12:00:00.0 | 2026-07-09T13:00:00.0 | 2026-07-10T12:00:00.0 | 157 |  | 2024-03-13T14:56:00.0 | 6.2.1 |  | PRORATED | True | True | 00000000-0000-0000-0000-000000000252 | True | PRORATED | 28800 | 2026-07-10T12:00:00.0 | 2026-07-09T13:00:00.0 | True | 2026-07-10T12:00:00.0 |  |  | 157 |  | 3 |  | 156 | 125 157 158 FS | Building > Level 1 | Plumbing > Fixtures | Construct | Sets->Plumbing->Fixtures->Plumb-Fixtures-L1 | 2026-07-09T12:00:00.0 | 124 155 157 FS |  |
| 2026-07-10T13:00:00.0 | ed | Plumb-Fixtures-L2 | 6.2.2 | AS_SOON_AS_POSSIBLE | True | 500 | 86400 | 86400 | 2026-07-10T13:00:00.0 | 2026-07-15T12:00:00.0 | 2026-07-10T13:00:00.0 | 2026-07-15T12:00:00.0 | 158 |  | 2024-03-13T14:56:00.0 | 6.2.2 |  | PRORATED | True | True | 00000000-0000-0000-0000-000000000095 | True | PRORATED | 86400 | 2026-07-15T12:00:00.0 | 2026-07-10T13:00:00.0 | True | 2026-07-15T12:00:00.0 |  |  | 158 |  | 3 |  | 156 | 126 158 159 FS | Building > Level 2 | Plumbing > Fixtures | Construct | Sets->Plumbing->Fixtures->Plumb-Fixtures-L2 | 2026-07-10T12:00:00.0 | 125 157 158 FS |  |
| 2026-07-15T13:00:00.0 | ed | Plumb-Fixtures-L3 | 6.2.3 | AS_SOON_AS_POSSIBLE | True | 500 | 86400 | 86400 | 2026-07-15T13:00:00.0 | 2026-07-20T12:00:00.0 | 2026-07-15T13:00:00.0 | 2026-07-20T12:00:00.0 | 159 |  | 2024-03-13T14:56:00.0 | 6.2.3 |  | PRORATED | True | True | 00000000-0000-0000-0000-000000000050 | True | PRORATED | 86400 | 2026-07-20T12:00:00.0 | 2026-07-15T13:00:00.0 | True | 2026-07-20T12:00:00.0 |  |  | 159 |  | 3 |  | 156 | 127 159 160 FS | Building > Level 3 | Plumbing > Fixtures | Construct | Sets->Plumbing->Fixtures->Plumb-Fixtures-L3 | 2026-07-15T12:00:00.0 | 126 158 159 FS |  |
| 2026-07-20T13:00:00.0 | ed | Plumb-Fixtures-L4 | 6.2.4 | AS_SOON_AS_POSSIBLE | True | 500 | 115200 | 115200 | 2026-07-20T13:00:00.0 | 2026-07-24T12:00:00.0 | 2026-07-20T13:00:00.0 | 2026-07-24T12:00:00.0 | 160 |  | 2024-03-13T14:56:00.0 | 6.2.4 |  | PRORATED | True | True | 00000000-0000-0000-0000-000000000020 | True | PRORATED | 115200 | 2026-07-24T12:00:00.0 | 2026-07-20T13:00:00.0 | True | 2026-07-24T12:00:00.0 |  |  | 160 |  | 3 |  | 156 | 128 160 161 FS | Building > Level 4 | Plumbing > Fixtures | Construct | Sets->Plumbing->Fixtures->Plumb-Fixtures-L4 | 2026-07-20T12:00:00.0 | 127 159 160 FS |  |
| 2026-07-24T13:00:00.0 | ed | Plumb-Fixtures-L5 | 6.2.5 | AS_SOON_AS_POSSIBLE | True | 500 | 115200 | 115200 | 2026-07-24T13:00:00.0 | 2026-07-30T12:00:00.0 | 2026-07-24T13:00:00.0 | 2026-07-30T12:00:00.0 | 161 |  | 2024-03-13T14:56:00.0 | 6.2.5 |  | PRORATED | True | True | 00000000-0000-0000-0000-000000000028 | True | PRORATED | 115200 | 2026-07-30T12:00:00.0 | 2026-07-24T13:00:00.0 | True | 2026-07-30T12:00:00.0 |  |  | 161 |  | 3 |  | 156 | 129 161 164 FS | Building > Level 5 | Plumbing > Fixtures | Construct | Sets->Plumbing->Fixtures->Plumb-Fixtures-L5 | 2026-07-24T12:00:00.0 | 128 160 161 FS |  |
| 2026-07-30T13:00:00.0 | ed | Fire Alarm and Sprinkler | 7 | AS_SOON_AS_POSSIBLE | True | 500 | 921600 | 921600 | 2026-07-30T13:00:00.0 | 2026-09-14T12:00:00.0 | 2026-07-30T13:00:00.0 | 2026-09-14T12:00:00.0 | 162 | True | 2024-03-13T14:56:00.0 | 7 | FIXED_DURATION | PRORATED | True | True | 00000000-0000-0000-0000-000000000072 | True | PRORATED | 921600 | 2026-09-14T12:00:00.0 | 2026-07-30T13:00:00.0 | True | 2026-09-14T12:00:00.0 |  |  | 162 | True | 1 |  | 0 |  |  |  |  |  |  |  |  |
| 2026-07-30T13:00:00.0 | ed | Sprinkler | 7.1 | AS_SOON_AS_POSSIBLE | True | 500 | 547200 | 547200 | 2026-07-30T13:00:00.0 | 2026-08-26T12:00:00.0 | 2026-07-30T13:00:00.0 | 2026-08-26T12:00:00.0 | 163 | True | 2024-03-13T14:56:00.0 | 7.1 | FIXED_DURATION | PRORATED | True | True | 00000000-0000-0000-0000-000000000250 | True | PRORATED | 547200 | 2026-08-26T12:00:00.0 | 2026-07-30T13:00:00.0 | True | 2026-08-26T12:00:00.0 |  |  | 163 | True | 2 |  | 162 |  |  |  |  |  |  |  |  |
| 2026-07-30T13:00:00.0 | ed | Sprinkler-L1 | 7.1.1 | AS_SOON_AS_POSSIBLE | True | 500 | 86400 | 86400 | 2026-07-30T13:00:00.0 | 2026-08-04T12:00:00.0 | 2026-07-30T13:00:00.0 | 2026-08-04T12:00:00.0 | 164 |  | 2024-03-13T14:56:00.0 | 7.1.1 |  | PRORATED | True | True | 00000000-0000-0000-0000-000000000172 | True | PRORATED | 86400 | 2026-08-04T12:00:00.0 | 2026-07-30T13:00:00.0 | True | 2026-08-04T12:00:00.0 |  |  | 164 |  | 3 |  | 163 | 130 164 165 FS | Building > Level 1 | Fire Protection > Sprinklers | Construct | Sets->Sprinkler->Sprinkler-L1 | 2026-07-30T12:00:00.0 | 129 161 164 FS |  |
| 2026-08-04T13:00:00.0 | ed | Sprinkler-L2 | 7.1.2 | AS_SOON_AS_POSSIBLE | True | 500 | 144000 | 144000 | 2026-08-04T13:00:00.0 | 2026-08-11T12:00:00.0 | 2026-08-04T13:00:00.0 | 2026-08-11T12:00:00.0 | 165 |  | 2024-03-13T14:56:00.0 | 7.1.2 |  | PRORATED | True | True | 00000000-0000-0000-0000-000000000190 | True | PRORATED | 144000 | 2026-08-11T12:00:00.0 | 2026-08-04T13:00:00.0 | True | 2026-08-11T12:00:00.0 |  |  | 165 |  | 3 |  | 163 | 131 165 166 FS | Building > Level 2 | Fire Protection > Sprinklers | Construct | Sets->Sprinkler->Sprinkler-L2 | 2026-08-04T12:00:00.0 | 130 164 165 FS |  |
| 2026-08-11T13:00:00.0 | ed | Sprinkler-L3 | 7.1.3 | AS_SOON_AS_POSSIBLE | True | 500 | 115200 | 115200 | 2026-08-11T13:00:00.0 | 2026-08-17T12:00:00.0 | 2026-08-11T13:00:00.0 | 2026-08-17T12:00:00.0 | 166 |  | 2024-03-13T14:56:00.0 | 7.1.3 |  | PRORATED | True | True | 00000000-0000-0000-0000-000000000019 | True | PRORATED | 115200 | 2026-08-17T12:00:00.0 | 2026-08-11T13:00:00.0 | True | 2026-08-17T12:00:00.0 |  |  | 166 |  | 3 |  | 163 | 132 166 167 FS | Building > Level 3 | Fire Protection > Sprinklers | Construct | Sets->Sprinkler->Sprinkler-L3 | 2026-08-11T12:00:00.0 | 131 165 166 FS |  |
| 2026-08-17T13:00:00.0 | ed | Sprinkler-L4 | 7.1.4 | AS_SOON_AS_POSSIBLE | True | 500 | 86400 | 86400 | 2026-08-17T13:00:00.0 | 2026-08-20T12:00:00.0 | 2026-08-17T13:00:00.0 | 2026-08-20T12:00:00.0 | 167 |  | 2024-03-13T14:56:00.0 | 7.1.4 |  | PRORATED | True | True | 00000000-0000-0000-0000-000000000209 | True | PRORATED | 86400 | 2026-08-20T12:00:00.0 | 2026-08-17T13:00:00.0 | True | 2026-08-20T12:00:00.0 |  |  | 167 |  | 3 |  | 163 | 133 167 168 FS | Building > Level 4 | Fire Protection > Sprinklers | Construct | Sets->Sprinkler->Sprinkler-L4 | 2026-08-17T12:00:00.0 | 132 166 167 FS |  |
| 2026-08-20T13:00:00.0 | ed | Sprinkler-L5 | 7.1.5 | AS_SOON_AS_POSSIBLE | True | 500 | 115200 | 115200 | 2026-08-20T13:00:00.0 | 2026-08-26T12:00:00.0 | 2026-08-20T13:00:00.0 | 2026-08-26T12:00:00.0 | 168 |  | 2024-03-13T14:56:00.0 | 7.1.5 |  | PRORATED | True | True | 00000000-0000-0000-0000-000000000247 | True | PRORATED | 115200 | 2026-08-26T12:00:00.0 | 2026-08-20T13:00:00.0 | True | 2026-08-26T12:00:00.0 |  |  | 168 |  | 3 |  | 163 | 134 168 170 FS | Building > Level 5 | Fire Protection > Sprinklers | Construct | Sets->Sprinkler->Sprinkler-L5 | 2026-08-20T12:00:00.0 | 133 167 168 FS |  |
| 2026-08-26T13:00:00.0 | ed | Fire Alarm | 7.2 | AS_SOON_AS_POSSIBLE | True | 500 | 374400 | 374400 | 2026-08-26T13:00:00.0 | 2026-09-14T12:00:00.0 | 2026-08-26T13:00:00.0 | 2026-09-14T12:00:00.0 | 169 | True | 2024-03-13T14:56:00.0 | 7.2 | FIXED_DURATION | PRORATED | True | True | 00000000-0000-0000-0000-000000000122 | True | PRORATED | 374400 | 2026-09-14T12:00:00.0 | 2026-08-26T13:00:00.0 | True | 2026-09-14T12:00:00.0 |  |  | 169 | True | 2 |  | 162 |  |  |  |  |  |  |  |  |
| 2026-08-26T13:00:00.0 | ed | FireAlarm-Control_Panels | 7.2.1 | AS_SOON_AS_POSSIBLE | True | 500 | 86400 | 86400 | 2026-08-26T13:00:00.0 | 2026-08-31T12:00:00.0 | 2026-08-26T13:00:00.0 | 2026-08-31T12:00:00.0 | 170 |  | 2024-03-13T14:56:00.0 | 7.2.1 |  | PRORATED | True | True | 00000000-0000-0000-0000-000000000058 | True | PRORATED | 86400 | 2026-08-31T12:00:00.0 | 2026-08-26T13:00:00.0 | True | 2026-08-31T12:00:00.0 |  |  | 170 |  | 3 |  | 169 | 135 170 171 FS | Building | Fire Alarm > Control Panels | Construct | Sets->Fire Alarm->FireAlarm-Control_Panels | 2026-08-26T12:00:00.0 | 134 168 170 FS |  |
| 2026-08-31T13:00:00.0 | ed | FireAlarm-Horn Strobes | 7.2.2 | AS_SOON_AS_POSSIBLE | True | 500 | 115200 | 115200 | 2026-08-31T13:00:00.0 | 2026-09-04T12:00:00.0 | 2026-08-31T13:00:00.0 | 2026-09-04T12:00:00.0 | 171 |  | 2024-03-13T14:56:00.0 | 7.2.2 |  | PRORATED | True | True | 00000000-0000-0000-0000-000000000086 | True | PRORATED | 115200 | 2026-09-04T12:00:00.0 | 2026-08-31T13:00:00.0 | True | 2026-09-04T12:00:00.0 |  |  | 171 |  | 3 |  | 169 | 136 171 172 FS | Building | Fire Alarm > Horn Strobes | Construct | Sets->Fire Alarm->FireAlarm-Horn Strobes | 2026-08-31T12:00:00.0 | 135 170 171 FS |  |
| 2026-09-04T13:00:00.0 | ed | FireAlarm-Smoke Detectors | 7.2.3 | AS_SOON_AS_POSSIBLE | True | 500 | 86400 | 86400 | 2026-09-04T13:00:00.0 | 2026-09-09T12:00:00.0 | 2026-09-04T13:00:00.0 | 2026-09-09T12:00:00.0 | 172 |  | 2024-03-13T14:56:00.0 | 7.2.3 |  | PRORATED | True | True | 00000000-0000-0000-0000-000000000293 | True | PRORATED | 86400 | 2026-09-09T12:00:00.0 | 2026-09-04T13:00:00.0 | True | 2026-09-09T12:00:00.0 |  |  | 172 |  | 3 |  | 169 | 137 172 173 FS | Building | Fire Alarm > Smoke Detectors | Construct | Sets->Fire Alarm->FireAlarm-Smoke Detectors | 2026-09-04T12:00:00.0 | 136 171 172 FS |  |
| 2026-09-09T13:00:00.0 | ed | FireAlarm-Pull Stations | 7.2.4 | AS_SOON_AS_POSSIBLE | True | 500 | 86400 | 86400 | 2026-09-09T13:00:00.0 | 2026-09-14T12:00:00.0 | 2026-09-09T13:00:00.0 | 2026-09-14T12:00:00.0 | 173 |  | 2024-03-13T14:56:00.0 | 7.2.4 |  | PRORATED | True | True | 00000000-0000-0000-0000-000000000115 | True | PRORATED | 86400 | 2026-09-14T12:00:00.0 | 2026-09-09T13:00:00.0 | True | 2026-09-14T12:00:00.0 |  |  | 173 |  | 3 |  | 169 | 138 173 128 FS | Building | Fire Alarm > Pull Stations | Construct | Sets->Fire Alarm->FireAlarm-Pull Stations | 2026-09-09T12:00:00.0 | 137 172 173 FS |  |
